# lab1_1

Schedule from MS Project, 2021-03-01 to 2021-07-30, costs in ₽.
Команда -- 16 человек / Длительность -- 6 месяцев / Бюджет -- 50 000 рублей

## Calendars

- Standard: Mon-Fri 08:00-12:00, 13:00-17:00; Sat-Sun off. Exceptions (off unless hours are given): 2021-03-08 (8 марта), 2021-05-03 (Перенос Праздник Весны и Труда), 2021-05-10 (Перенос День Победы), 2021-06-14 (Перенос День России).

## Resources

| Resource | Group | Rate | Cost per use |
| --- | --- | --- | --- |
| Ведущий программист | Программирование | 10 | 100 |
| Программист#1 | Программирование | 7 | 50 |
| Программист#2 | Программирование | 7 | 50 |
| Программист#3 | Программирование | 7 | 50 |
| Программист#4 | Программирование | 7 | 50 |
| Системный аналитик | Анализ | 20 | 300 |
| Художник-дизайнер | Дизайн | 8 | 70 |
| Технический писатель | Документация | 5 | 20 |
| Web-дизайнер | Internet | 7 | 50 |
| 3D аниматор | Дизайн | 8 | 70 |
| Мультимедиа-корреспондент | М-Медиа | 3 | 20 |
| Наборщик данных#1 | Ввод данных | 2 | 10 |
| Наборщик данных#2 | Ввод данных | 2 | 10 |
| Наборщик данных#3 | Ввод данных | 2 | 10 |
| Наборщик данных#4 | Ввод данных | 2 | 10 |
| Наборщик данных#5 | Ввод данных | 2 | 10 |
| Дополнительный сервер | Оборудование | 2 |  |

## Schedule

| ID | WBS | Task | Type | Duration | Start | Finish | Predecessors | Baseline start | Baseline finish | Baseline duration | Total slack | Free slack | Resources | Work | Cost | Baseline cost |
| --- | --- | --- | --- | --- | --- | --- | --- | --- | --- | --- | --- | --- | --- | --- | --- | --- |
| 1 | 1 | Начало проекта | milestone | 0w | 2021-03-01 09:00 | 2021-03-01 09:00 |  | 2021-03-01 09:00 | 2021-03-01 09:00 | 0w | 45.85d | 0d |  |  |  |  |
| 2 | 2 | **Разработка дизайна интерфейса** |  | 78.97d | 2021-03-01 09:00 | 2021-06-24 08:46 | 1 | 2021-03-01 09:00 | 2021-06-24 08:46 | 78.97d | 0d |  |  | 560h | 5,650 | 5,650 |
| 3 | 2.1 | **Создание интерфейса** |  | 25.62d | 2021-03-01 09:00 | 2021-04-06 15:00 |  | 2021-03-01 09:00 | 2021-04-06 15:00 | 25.62d | 45.85d | 0d |  | 320h | 2,770 | 2,770 |
| 4 | 2.1.1 | Разработка 2D графических элементов |  | 3w | 2021-03-01 09:00 | 2021-03-23 12:00 |  | 2021-03-01 09:00 | 2021-03-23 12:00 | 3w | 45.85d | 0d | Художник-дизайнер | 120h | 1,030 | 1,030 |
| 5 | 2.1.2 | Разработка 3D графических элементов |  | 2w | 2021-03-01 09:00 | 2021-03-16 11:00 | 4SS | 2021-03-01 09:00 | 2021-03-16 11:00 | 2w | 45.85d | 0d | 3D аниматор | 80h | 710 | 710 |
| 6 | 2.1.3 | Создание заставки |  | 3w | 2021-03-16 11:00 | 2021-04-06 15:00 | 5 | 2021-03-16 11:00 | 2021-04-06 15:00 | 3w | 45.85d |  | 3D аниматор | 120h | 1,030 | 1,030 |
| 7 | 2.2 | Программирование интерфейса |  | 1.5w | 2021-06-11 13:46 | 2021-06-24 08:46 | 3, 12 | 2021-06-11 13:46 | 2021-06-24 08:46 | 1.5w | 0d |  | Программист#3; Программист#4; Программист#1; Программист#2 | 240h | 1,880 | 1,880 |
| 8 | 3 | **Построение базы объектов** |  | 85.25d | 2021-03-23 13:00 | 2021-07-23 15:00 |  | 2021-03-23 13:00 | 2021-07-23 15:00 | 85.25d | 4.55d |  | Дополнительный сервер | 5650h | 15,390 | 15,390 |
| 9 | 3.1 | Анализ и построение структуры базы объектов |  | 2w | 2021-03-23 13:00 | 2021-04-06 15:00 |  | 2021-03-23 13:00 | 2021-04-06 15:00 | 2w | 4.55d | 0d | Системный аналитик | 80h | 1,900 | 1,900 |
| 10 | 3.2 | Программирование средств обработки базы объектов |  | 3w | 2021-04-06 15:00 | 2021-04-27 15:00 | 9 | 2021-04-06 15:00 | 2021-04-27 15:00 | 3w | 4.55d | 0d | Программист#3; Программист#4 | 240h | 1,780 | 1,780 |
| 11 | 3.3 | Наполнение базы объектов |  | 12w | 2021-04-27 15:00 | 2021-07-23 15:00 | 10 | 2021-04-27 15:00 | 2021-07-23 15:00 | 12w | 4.55d |  | Наборщик данных#1; Наборщик данных#2; Наборщик данных#3; Наборщик данных#4; Наборщик данных#5 | 2400h | 4,850 | 4,850 |
| 12 | 4 | **Создание ядра GIS** |  | 71.47d | 2021-03-01 09:00 | 2021-06-11 13:46 |  | 2021-03-01 09:00 | 2021-06-11 13:46 | 71.47d | 0d |  |  | 1880h | 18,072.91 | 18,072.91 |
| 13 | 4.1 | Анализ и проектирование ядра |  | 3w | 2021-03-01 09:00 | 2021-03-23 12:00 |  | 2021-03-01 09:00 | 2021-03-23 12:00 | 3w | 0d |  | Ведущий программист; Системный аналитик | 240h | 4,000 | 4,000 |
| 14 | 4.2 | Создание модели ядра |  | 2.02w | 2021-03-23 13:00 | 2021-04-06 13:49 | 13 | 2021-03-23 13:00 | 2021-04-06 13:49 | 2.02w | 0d |  | Ведущий программист; Программист#1; Программист#2; Программист#3; Программист#4 | 400h | 3,336.46 | 3,336.46 |
| 15 | 4.3 | Тестирование модели ядра |  | 1w | 2021-04-06 13:49 | 2021-04-13 13:49 | 14 | 2021-04-06 13:49 | 2021-04-13 13:49 | 1w | 0d |  | Программист#1 | 40h | 330 | 330 |
| 16 | 4.4 | Создание рабочей версии ядра |  | 8.2w | 2021-04-13 13:49 | 2021-06-11 13:46 | 15 | 2021-04-13 13:49 | 2021-06-11 13:46 | 8.2w | 0d |  | Ведущий программист; Программист#1; Программист#2; Программист#3; Программист#4 | 1200h | 9,406.45 | 9,406.45 |
| 17 | 5 | Создание мультимедиа – наполнения |  | 6w | 2021-04-06 15:00 | 2021-05-21 14:00 | 3 | 2021-04-06 15:00 | 2021-05-21 14:00 | 6w | 48.68d |  | Мультимедиа-корреспондент | 240h | 740 | 740 |
| 18 | 6 | Создание справочной системы |  | 2w | 2021-07-06 14:46 | 2021-07-21 15:46 | 7 | 2021-07-06 14:46 | 2021-07-21 15:46 | 2w | 6.46d |  | Технический писатель | 80h | 420 | 420 |
| 19 | 7 | **Создание руководства пользователя** |  | 18.62d | 2021-06-09 08:46 | 2021-07-06 14:46 | 7FS-10d | 2021-06-09 08:46 | 2021-07-06 14:46 | 18.62d | 0d |  |  | 160h | 1,010 | 1,010 |
| 20 | 7.1 | Разработка дизайна руководства |  | 1w | 2021-06-09 08:46 | 2021-06-17 14:46 |  | 2021-06-09 08:46 | 2021-06-17 14:46 | 1w | 0d |  | Художник-дизайнер | 40h | 390 | 390 |
| 21 | 7.2 | Написание руководства пользователя |  | 3w | 2021-06-11 08:46 | 2021-07-06 14:46 | 20SS+2d | 2021-06-11 08:46 | 2021-07-06 14:46 | 3w | 0d |  | Технический писатель | 120h | 620 | 620 |
| 22 | 8 | **Создание web–сайта и поддержка** |  | 25.53d | 2021-06-11 08:46 | 2021-07-19 14:00 |  | 2021-06-11 08:46 | 2021-07-19 14:00 | 25.53d | 0d |  |  | 240h | 2,050 | 2,050 |
| 23 | 8.1 | Разработка структуры сайта | milestone | 0d | 2021-06-11 08:46 | 2021-06-11 08:46 | 21SS | 2021-06-11 08:46 | 2021-06-11 08:46 | 0d | 0d |  | Web-дизайнер |  | 50 | 50 |
| 24 | 8.2 | Разработка дизайна сайта |  | 1.68w | 2021-06-11 08:46 | 2021-06-25 09:46 | 23 | 2021-06-11 08:46 | 2021-06-25 09:46 | 1.68w | 0d |  | 3D аниматор; Web-дизайнер; Художник-дизайнер | 120h | 1,110 | 1,110 |
| 25 | 8.3 | Наполнение сайта |  | 3w | 2021-06-25 09:46 | 2021-07-19 14:00 | 24 | 2021-06-25 09:46 | 2021-07-19 14:00 | 3w | 0d |  | Web-дизайнер | 120h | 890 | 890 |
| 26 | 9 | Тестирование сайта |  | 2.71w | 2021-07-12 14:00 | 2021-07-30 10:25 | 22FS-1w | 2021-07-12 14:00 | 2021-07-30 10:25 | 2.71w | 0d |  | Ведущий программист; Программист#1; Программист#2; Программист#3; Программист#4 | 480h | 3,934.28 | 3,934.28 |
| 27 | 10 | Сдача сайта в эксплуатацию | milestone | 0w | 2021-07-30 10:25 | 2021-07-30 10:25 | 26 | 2021-07-30 10:25 | 2021-07-30 10:25 | 0w | 0d |  |  |  |  |  |

| ID | WBS | Task | Duration | Start | Finish | Baseline start | Baseline finish | Baseline duration | Total slack | Constraint | Resources | Work | Cost | Baseline cost |
| --- | --- | --- | --- | --- | --- | --- | --- | --- | --- | --- | --- | --- | --- | --- |
| 28 | 11 | **Еженедельное совещание** | 101.12d | 2021-03-03 09:00 | 2021-07-28 10:00 | 2021-03-03 09:00 | 2021-07-28 10:00 | 101.12d | 2.05d |  |  | 154h | 1,188 | 1,188 |
| 29 | 11.1 | Еженедельное совещание 1 | 1h | 2021-03-03 09:00 | 2021-03-03 10:00 | 2021-03-03 09:00 | 2021-03-03 10:00 | 1h | 103.05d | start no earlier than 2021-03-03 09:00 | 3D аниматор; Web-дизайнер; Ведущий программист; Мультимедиа-корреспондент; Системный аналитик; Технический писатель; Художник-дизайнер | 7h | 54 | 54 |
| 30 | 11.2 | Еженедельное совещание 2 | 1h | 2021-03-10 09:00 | 2021-03-10 10:00 | 2021-03-10 09:00 | 2021-03-10 10:00 | 1h | 99.05d | start no earlier than 2021-03-10 09:00 | 3D аниматор; Web-дизайнер; Ведущий программист; Мультимедиа-корреспондент; Системный аналитик; Технический писатель; Художник-дизайнер | 7h | 54 | 54 |
| 31 | 11.3 | Еженедельное совещание 3 | 1h | 2021-03-17 09:00 | 2021-03-17 10:00 | 2021-03-17 09:00 | 2021-03-17 10:00 | 1h | 94.05d | start no earlier than 2021-03-17 09:00 | 3D аниматор; Web-дизайнер; Ведущий программист; Мультимедиа-корреспондент; Системный аналитик; Технический писатель; Художник-дизайнер | 7h | 54 | 54 |
| 32 | 11.4 | Еженедельное совещание 4 | 1h | 2021-03-24 09:00 | 2021-03-24 10:00 | 2021-03-24 09:00 | 2021-03-24 10:00 | 1h | 89.05d | start no earlier than 2021-03-24 09:00 | 3D аниматор; Web-дизайнер; Ведущий программист; Мультимедиа-корреспондент; Системный аналитик; Технический писатель; Художник-дизайнер | 7h | 54 | 54 |
| 33 | 11.5 | Еженедельное совещание 5 | 1h | 2021-03-31 09:00 | 2021-03-31 10:00 | 2021-03-31 09:00 | 2021-03-31 10:00 | 1h | 84.05d | start no earlier than 2021-03-31 09:00 | 3D аниматор; Web-дизайнер; Ведущий программист; Мультимедиа-корреспондент; Системный аналитик; Технический писатель; Художник-дизайнер | 7h | 54 | 54 |
| 34 | 11.6 | Еженедельное совещание 6 | 1h | 2021-04-07 09:00 | 2021-04-07 10:00 | 2021-04-07 09:00 | 2021-04-07 10:00 | 1h | 79.05d | start no earlier than 2021-04-07 09:00 | 3D аниматор; Web-дизайнер; Ведущий программист; Мультимедиа-корреспондент; Системный аналитик; Технический писатель; Художник-дизайнер | 7h | 54 | 54 |
| 35 | 11.7 | Еженедельное совещание 7 | 1h | 2021-04-14 09:00 | 2021-04-14 10:00 | 2021-04-14 09:00 | 2021-04-14 10:00 | 1h | 74.05d | start no earlier than 2021-04-14 09:00 | 3D аниматор; Web-дизайнер; Ведущий программист; Мультимедиа-корреспондент; Системный аналитик; Технический писатель; Художник-дизайнер | 7h | 54 | 54 |
| 36 | 11.8 | Еженедельное совещание 8 | 1h | 2021-04-21 09:00 | 2021-04-21 10:00 | 2021-04-21 09:00 | 2021-04-21 10:00 | 1h | 69.05d | start no earlier than 2021-04-21 09:00 | 3D аниматор; Web-дизайнер; Ведущий программист; Мультимедиа-корреспондент; Системный аналитик; Технический писатель; Художник-дизайнер | 7h | 54 | 54 |
| 37 | 11.9 | Еженедельное совещание 9 | 1h | 2021-04-28 09:00 | 2021-04-28 10:00 | 2021-04-28 09:00 | 2021-04-28 10:00 | 1h | 64.05d | start no earlier than 2021-04-28 09:00 | 3D аниматор; Web-дизайнер; Ведущий программист; Мультимедиа-корреспондент; Системный аналитик; Технический писатель; Художник-дизайнер | 7h | 54 | 54 |
| 38 | 11.10 | Еженедельное совещание 10 | 1h | 2021-05-05 09:00 | 2021-05-05 10:00 | 2021-05-05 09:00 | 2021-05-05 10:00 | 1h | 60.05d | start no earlier than 2021-05-05 09:00 | 3D аниматор; Web-дизайнер; Ведущий программист; Мультимедиа-корреспондент; Системный аналитик; Технический писатель; Художник-дизайнер | 7h | 54 | 54 |
| 39 | 11.11 | Еженедельное совещание 11 | 1h | 2021-05-12 09:00 | 2021-05-12 10:00 | 2021-05-12 09:00 | 2021-05-12 10:00 | 1h | 56.05d | start no earlier than 2021-05-12 09:00 | 3D аниматор; Web-дизайнер; Ведущий программист; Мультимедиа-корреспондент; Системный аналитик; Технический писатель; Художник-дизайнер | 7h | 54 | 54 |
| 40 | 11.12 | Еженедельное совещание 12 | 1h | 2021-05-19 09:00 | 2021-05-19 10:00 | 2021-05-19 09:00 | 2021-05-19 10:00 | 1h | 51.05d | start no earlier than 2021-05-19 09:00 | 3D аниматор; Web-дизайнер; Ведущий программист; Мультимедиа-корреспондент; Системный аналитик; Технический писатель; Художник-дизайнер | 7h | 54 | 54 |
| 41 | 11.13 | Еженедельное совещание 13 | 1h | 2021-05-26 09:00 | 2021-05-26 10:00 | 2021-05-26 09:00 | 2021-05-26 10:00 | 1h | 46.05d | start no earlier than 2021-05-26 09:00 | 3D аниматор; Web-дизайнер; Ведущий программист; Мультимедиа-корреспондент; Системный аналитик; Технический писатель; Художник-дизайнер | 7h | 54 | 54 |
| 42 | 11.14 | Еженедельное совещание 14 | 1h | 2021-06-02 09:00 | 2021-06-02 10:00 | 2021-06-02 09:00 | 2021-06-02 10:00 | 1h | 41.05d | start no earlier than 2021-06-02 09:00 | 3D аниматор; Web-дизайнер; Ведущий программист; Мультимедиа-корреспондент; Системный аналитик; Технический писатель; Художник-дизайнер | 7h | 54 | 54 |
| 43 | 11.15 | Еженедельное совещание 15 | 1h | 2021-06-09 09:00 | 2021-06-09 10:00 | 2021-06-09 09:00 | 2021-06-09 10:00 | 1h | 36.05d | start no earlier than 2021-06-09 09:00 | 3D аниматор; Web-дизайнер; Ведущий программист; Мультимедиа-корреспондент; Системный аналитик; Технический писатель; Художник-дизайнер | 7h | 54 | 54 |
| 44 | 11.16 | Еженедельное совещание 16 | 1h | 2021-06-16 09:00 | 2021-06-16 10:00 | 2021-06-16 09:00 | 2021-06-16 10:00 | 1h | 32.05d | start no earlier than 2021-06-16 09:00 | 3D аниматор; Web-дизайнер; Ведущий программист; Мультимедиа-корреспондент; Системный аналитик; Технический писатель; Художник-дизайнер | 7h | 54 | 54 |
| 45 | 11.17 | Еженедельное совещание 17 | 1h | 2021-06-23 09:00 | 2021-06-23 10:00 | 2021-06-23 09:00 | 2021-06-23 10:00 | 1h | 27.05d | start no earlier than 2021-06-23 09:00 | 3D аниматор; Web-дизайнер; Ведущий программист; Мультимедиа-корреспондент; Системный аналитик; Технический писатель; Художник-дизайнер | 7h | 54 | 54 |
| 46 | 11.18 | Еженедельное совещание 18 | 1h | 2021-06-30 09:00 | 2021-06-30 10:00 | 2021-06-30 09:00 | 2021-06-30 10:00 | 1h | 22.05d | start no earlier than 2021-06-30 09:00 | 3D аниматор; Web-дизайнер; Ведущий программист; Мультимедиа-корреспондент; Системный аналитик; Технический писатель; Художник-дизайнер | 7h | 54 | 54 |
| 47 | 11.19 | Еженедельное совещание 19 | 1h | 2021-07-07 09:00 | 2021-07-07 10:00 | 2021-07-07 09:00 | 2021-07-07 10:00 | 1h | 17.05d | start no earlier than 2021-07-07 09:00 | 3D аниматор; Web-дизайнер; Ведущий программист; Мультимедиа-корреспондент; Системный аналитик; Технический писатель; Художник-дизайнер | 7h | 54 | 54 |
| 48 | 11.20 | Еженедельное совещание 20 | 1h | 2021-07-14 09:00 | 2021-07-14 10:00 | 2021-07-14 09:00 | 2021-07-14 10:00 | 1h | 12.05d | start no earlier than 2021-07-14 09:00 | 3D аниматор; Web-дизайнер; Ведущий программист; Мультимедиа-корреспондент; Системный аналитик; Технический писатель; Художник-дизайнер | 7h | 54 | 54 |
| 49 | 11.21 | Еженедельное совещание 21 | 1h | 2021-07-21 09:00 | 2021-07-21 10:00 | 2021-07-21 09:00 | 2021-07-21 10:00 | 1h | 7.05d | start no earlier than 2021-07-21 09:00 | 3D аниматор; Web-дизайнер; Ведущий программист; Мультимедиа-корреспондент; Системный аналитик; Технический писатель; Художник-дизайнер | 7h | 54 | 54 |
| 50 | 11.22 | Еженедельное совещание 22 | 1h | 2021-07-28 09:00 | 2021-07-28 10:00 | 2021-07-28 09:00 | 2021-07-28 10:00 | 1h | 2.05d | start no earlier than 2021-07-28 09:00 | 3D аниматор; Web-дизайнер; Ведущий программист; Мультимедиа-корреспондент; Системный аналитик; Технический писатель; Художник-дизайнер | 7h | 54 | 54 |
