# task2

Schedule from MS Project, 2023-03-01 to 2023-09-15, costs in ₽.
Cозданием карты города на основе собственного модуля отображения
Команда разработчиков из 16 человек занимается созданием карты города на основе собственного модуля отображения. Проект должен быть завершен в течение 6 месяцев. Бюджет проекта: 50 000 рублей.

## Calendars

- Стандартный: Mon-Fri 09:00-13:00, 14:00-18:00; Sat-Sun off. Exceptions (off unless hours are given): 2023-03-08 (Международный женский день), 2023-04-29 to 2023-05-01 (Праздник Весны и Труда), 2023-05-06 to 2023-05-09 (День Победы), 2023-06-10 to 2023-06-12 (День России).

## Resources

| Resource | Group | Rate | Cost per use |
| --- | --- | --- | --- |
| Программист#1 | Программирование | 7 | 50 |
| Программист#2 | Программирование | 7 | 50 |
| Ведущий программист | Программирование | 10 | 100 |
| Программист#3 | Программирование | 7 | 50 |
| Программист#4 | Программирование | 7 | 50 |
| Системный аналитик | Анализ | 20 | 300 |
| Художник-дизайнер | Дизайн | 8 | 70 |
| Технический писатель | Документация | 5 | 20 |
| Web-дизайнер | Internet | 7 | 50 |
| 3D аниматор | Дизайн | 8 | 70 |
| Мультимедиа-корреспондент | М-медиа | 3 | 20 |
| Наборщик данных#1 | Ввод данных | 2 | 10 |
| Наборщик данных#2 | Ввод данных | 2 | 10 |
| Наборщик данных#3 | Ввод данных | 2 | 10 |
| Наборщик данных#4 | Ввод данных | 2 | 10 |
| Наборщик данных#5 | Ввод данных | 2 | 10 |
| Дополнительный сервер |  | 2 |  |

## Schedule

| ID | WBS | Task | Type | Duration | Start | Finish | Predecessors | Total slack | Free slack | Resources | Work | Cost |
| --- | --- | --- | --- | --- | --- | --- | --- | --- | --- | --- | --- | --- |
| 1 | 1 | Начало проекта | milestone | 0w | 2023-03-01 09:00 | 2023-03-01 09:00 |  | 70d | 0d |  |  |  |
| 2 | 2 | **Создание интерфейса** |  | 110d | 2023-03-01 09:00 | 2023-08-08 18:00 | 1 | 0d |  |  | 560h | 5,550 |
| 3 | 2.1 | **Разработка дизайна интерфейса** |  | 25d | 2023-03-01 09:00 | 2023-04-05 18:00 |  | 70d | 0d |  | 320h | 2,770 |
| 4 | 2.1.1 | Разработка 2D графических элементов |  | 3w | 2023-03-01 09:00 | 2023-03-22 18:00 |  | 70d | 0d | Художник-дизайнер | 120h | 1,030 |
| 5 | 2.1.2 | Разработка 3D графических элементов |  | 2w | 2023-03-01 09:00 | 2023-03-15 18:00 | 4SS | 70d | 0d | 3D аниматор | 80h | 710 |
| 6 | 2.1.3 | Создание заставки |  | 3w | 2023-03-16 09:00 | 2023-04-05 18:00 | 5 | 70d |  | 3D аниматор | 120h | 1,030 |
| 7 | 2.2 | Программирование интерфейса |  | 3w | 2023-07-19 09:00 | 2023-08-08 18:00 | 3, 12 | 0d |  | Программист#3; Программист#4 | 240h | 1,780 |
| 8 | 3 | **Построение базы объектов** |  | 85d | 2023-03-23 09:00 | 2023-07-25 18:00 |  | 38d |  | Дополнительный сервер | 5705h | 15,500 |
| 9 | 3.1 | Анализ и построение структуры базы объектов |  | 2w | 2023-03-23 09:00 | 2023-04-05 18:00 |  | 38d | 0d | Системный аналитик | 80h | 1,900 |
| 10 | 3.2 | Программирование средств обработки базы объектов |  | 3w | 2023-04-06 09:00 | 2023-04-26 18:00 | 9 | 38d | 0d | Программист#3; Программист#4 | 240h | 1,780 |
| 11 | 3.3 | Наполнение базы объектов |  | 12w | 2023-04-27 09:00 | 2023-07-25 18:00 | 10 | 38d |  | Наборщик данных#1; Наборщик данных#2; Наборщик данных#3; Наборщик данных#4; Наборщик данных#5 | 2400h | 4,850 |
| 12 | 4 | **Создание ядра GIS** |  | 95d | 2023-03-01 09:00 | 2023-07-18 18:00 |  | 0d |  |  | 1880h | 18,680 |
| 13 | 4.1 | Анализ и проектирование ядра |  | 3w | 2023-03-01 09:00 | 2023-03-22 18:00 |  | 0d |  | Системный аналитик; Ведущий программист | 240h | 4,000 |
| 14 | 4.2 | Создание модели ядра |  | 5w | 2023-03-23 09:00 | 2023-04-26 18:00 | 13 | 0d |  | Программист#1; Ведущий программист | 400h | 3,550 |
| 15 | 4.3 | Тестирование модели ядра |  | 1w | 2023-04-27 09:00 | 2023-05-04 18:00 | 14 | 0d |  | Программист#1 | 40h | 330 |
| 16 | 4.4 | Создание рабочей версии ядра |  | 10w | 2023-05-05 09:00 | 2023-07-18 18:00 | 15 | 0d |  | Ведущий программист; Программист#1; Программист#2 | 1200h | 9,800 |
| 17 | 5 | Создание мультимедиа – наполнения |  | 6w | 2023-04-06 09:00 | 2023-05-22 18:00 | 3 | 83d |  | Мультимедиа-корреспондент | 240h | 740 |
| 18 | 6 | Создание справочной системы |  | 2w | 2023-08-18 09:00 | 2023-08-31 18:00 | 7 | 11d |  | Технический писатель | 80h | 420 |
| 19 | 7 | **Создание руководства пользователя** |  | 17d | 2023-07-26 09:00 | 2023-08-17 18:00 | 7FS-10d | 0d |  |  | 160h | 1,010 |
| 20 | 7.1 | Разработка дизайна руководства |  | 1w | 2023-07-26 09:00 | 2023-08-08 18:00 |  | 0d |  | Художник-дизайнер | 40h | 390 |
| 21 | 7.2 | Написание руководства пользователя |  | 3w | 2023-07-28 09:00 | 2023-08-17 18:00 | 20SS+2d | 0d |  | Технический писатель | 120h | 620 |
| 22 | 8 | **Создание web – сайта и поддержка** |  | 21d | 2023-07-28 09:00 | 2023-08-25 18:00 |  | 0d |  |  | 248h | 2,106 |
| 23 | 8.1 | Разработка структуры сайта |  | 1d | 2023-07-28 09:00 | 2023-07-28 18:00 | 21SS | 0d |  | Web-дизайнер | 8h | 106 |
| 24 | 8.2 | Разработка дизайна сайта |  | 1w | 2023-07-31 09:00 | 2023-08-04 18:00 | 23 | 0d |  | Художник-дизайнер; 3D аниматор; Web-дизайнер | 120h | 1,110 |
| 25 | 8.3 | Наполнение сайта |  | 3w | 2023-08-07 09:00 | 2023-08-25 18:00 | 24 | 0d |  | Web-дизайнер | 120h | 890 |
| 26 | 9 | Тестирование сайта |  | 4w | 2023-08-21 09:00 | 2023-09-15 18:00 | 22FS-1w | 0d |  | Ведущий программист; Программист#1; Программист#2 | 480h | 4,040 |
| 27 | 10 | Сдача сайта в эксплуатацию | milestone | 0w | 2023-09-15 18:00 | 2023-09-15 18:00 | 26 | 0d |  |  |  |  |

| ID | WBS | Task | Type | Duration | Start | Finish | Total slack | Constraint | Resources | Work | Cost |
| --- | --- | --- | --- | --- | --- | --- | --- | --- | --- | --- | --- |
| 28 | 11 | **Совещание** |  | 135.12d | 2023-03-01 09:00 | 2023-09-13 10:00 | 0d |  |  | 203h | 20,039 |
| 29 | 11.1 | Совещание 1 | manual | 1h | 2023-03-01 09:00 | 2023-03-01 10:00 |  | start no earlier than 2023-03-01 09:00 | 3D аниматор; Web-дизайнер; Ведущий программист; Мультимедиа-корреспондент; Системный аналитик; Художник-дизайнер; Технический писатель | 7h | 691 |
| 30 | 11.2 | Совещание 2 | manual | 1h | 2023-03-08 09:00 | 2023-03-08 10:00 |  | start no earlier than 2023-03-08 09:00 | 3D аниматор; Web-дизайнер; Ведущий программист; Мультимедиа-корреспондент; Системный аналитик; Художник-дизайнер; Технический писатель | 7h | 691 |
| 31 | 11.3 | Совещание 3 | manual | 1h | 2023-03-15 09:00 | 2023-03-15 10:00 |  | start no earlier than 2023-03-15 09:00 | 3D аниматор; Web-дизайнер; Ведущий программист; Мультимедиа-корреспондент; Системный аналитик; Художник-дизайнер; Технический писатель | 7h | 691 |
| 32 | 11.4 | Совещание 4 | manual | 1h | 2023-03-22 09:00 | 2023-03-22 10:00 |  | start no earlier than 2023-03-22 09:00 | 3D аниматор; Web-дизайнер; Ведущий программист; Мультимедиа-корреспондент; Системный аналитик; Художник-дизайнер; Технический писатель | 7h | 691 |
| 33 | 11.5 | Совещание 5 | manual | 1h | 2023-03-29 09:00 | 2023-03-29 10:00 |  | start no earlier than 2023-03-29 09:00 | 3D аниматор; Web-дизайнер; Ведущий программист; Мультимедиа-корреспондент; Системный аналитик; Художник-дизайнер; Технический писатель | 7h | 691 |
| 34 | 11.6 | Совещание 6 | manual | 1h | 2023-04-05 09:00 | 2023-04-05 10:00 |  | start no earlier than 2023-04-05 09:00 | 3D аниматор; Web-дизайнер; Ведущий программист; Мультимедиа-корреспондент; Системный аналитик; Художник-дизайнер; Технический писатель | 7h | 691 |
| 35 | 11.7 | Совещание 7 | manual | 1h | 2023-04-12 09:00 | 2023-04-12 10:00 |  | start no earlier than 2023-04-12 09:00 | 3D аниматор; Web-дизайнер; Ведущий программист; Мультимедиа-корреспондент; Системный аналитик; Художник-дизайнер; Технический писатель | 7h | 691 |
| 36 | 11.8 | Совещание 8 | manual | 1h | 2023-04-19 09:00 | 2023-04-19 10:00 |  | start no earlier than 2023-04-19 09:00 | 3D аниматор; Web-дизайнер; Ведущий программист; Мультимедиа-корреспондент; Системный аналитик; Художник-дизайнер; Технический писатель | 7h | 691 |
| 37 | 11.9 | Совещание 9 | manual | 1h | 2023-04-26 09:00 | 2023-04-26 10:00 |  | start no earlier than 2023-04-26 09:00 | 3D аниматор; Web-дизайнер; Ведущий программист; Мультимедиа-корреспондент; Системный аналитик; Художник-дизайнер; Технический писатель | 7h | 691 |
| 38 | 11.10 | Совещание 10 | manual | 1h | 2023-05-03 09:00 | 2023-05-03 10:00 |  | start no earlier than 2023-05-03 09:00 | 3D аниматор; Web-дизайнер; Ведущий программист; Мультимедиа-корреспондент; Системный аналитик; Художник-дизайнер; Технический писатель | 7h | 691 |
| 39 | 11.11 | Совещание 11 | manual | 1h | 2023-05-10 09:00 | 2023-05-10 10:00 |  | start no earlier than 2023-05-10 09:00 | 3D аниматор; Web-дизайнер; Ведущий программист; Мультимедиа-корреспондент; Системный аналитик; Художник-дизайнер; Технический писатель | 7h | 691 |
| 40 | 11.12 | Совещание 12 | manual | 1h | 2023-05-17 09:00 | 2023-05-17 10:00 |  | start no earlier than 2023-05-17 09:00 | 3D аниматор; Web-дизайнер; Ведущий программист; Мультимедиа-корреспондент; Системный аналитик; Художник-дизайнер; Технический писатель | 7h | 691 |
| 41 | 11.13 | Совещание 13 | manual | 1h | 2023-05-24 09:00 | 2023-05-24 10:00 |  | start no earlier than 2023-05-24 09:00 | 3D аниматор; Web-дизайнер; Ведущий программист; Мультимедиа-корреспондент; Системный аналитик; Художник-дизайнер; Технический писатель | 7h | 691 |
| 42 | 11.14 | Совещание 14 | manual | 1h | 2023-05-31 09:00 | 2023-05-31 10:00 |  | start no earlier than 2023-05-31 09:00 | 3D аниматор; Web-дизайнер; Ведущий программист; Мультимедиа-корреспондент; Системный аналитик; Художник-дизайнер; Технический писатель | 7h | 691 |
| 43 | 11.15 | Совещание 15 | manual | 1h | 2023-06-07 09:00 | 2023-06-07 10:00 |  | start no earlier than 2023-06-07 09:00 | 3D аниматор; Web-дизайнер; Ведущий программист; Мультимедиа-корреспондент; Системный аналитик; Художник-дизайнер; Технический писатель | 7h | 691 |
| 44 | 11.16 | Совещание 16 | manual | 1h | 2023-06-14 09:00 | 2023-06-14 10:00 |  | start no earlier than 2023-06-14 09:00 | 3D аниматор; Web-дизайнер; Ведущий программист; Мультимедиа-корреспондент; Системный аналитик; Художник-дизайнер; Технический писатель | 7h | 691 |
| 45 | 11.17 | Совещание 17 | manual | 1h | 2023-06-21 09:00 | 2023-06-21 10:00 |  | start no earlier than 2023-06-21 09:00 | 3D аниматор; Web-дизайнер; Ведущий программист; Мультимедиа-корреспондент; Системный аналитик; Художник-дизайнер; Технический писатель | 7h | 691 |
| 46 | 11.18 | Совещание 18 | manual | 1h | 2023-06-28 09:00 | 2023-06-28 10:00 |  | start no earlier than 2023-06-28 09:00 | 3D аниматор; Web-дизайнер; Ведущий программист; Мультимедиа-корреспондент; Системный аналитик; Художник-дизайнер; Технический писатель | 7h | 691 |
| 47 | 11.19 | Совещание 19 | manual | 1h | 2023-07-05 09:00 | 2023-07-05 10:00 |  | start no earlier than 2023-07-05 09:00 | 3D аниматор; Web-дизайнер; Ведущий программист; Мультимедиа-корреспондент; Системный аналитик; Художник-дизайнер; Технический писатель | 7h | 691 |
| 48 | 11.20 | Совещание 20 | manual | 1h | 2023-07-12 09:00 | 2023-07-12 10:00 |  | start no earlier than 2023-07-12 09:00 | 3D аниматор; Web-дизайнер; Ведущий программист; Мультимедиа-корреспондент; Системный аналитик; Художник-дизайнер; Технический писатель | 7h | 691 |
| 49 | 11.21 | Совещание 21 | manual | 1h | 2023-07-19 09:00 | 2023-07-19 10:00 |  | start no earlier than 2023-07-19 09:00 | 3D аниматор; Web-дизайнер; Ведущий программист; Мультимедиа-корреспондент; Системный аналитик; Художник-дизайнер; Технический писатель | 7h | 691 |
| 50 | 11.22 | Совещание 22 | manual | 1h | 2023-07-26 09:00 | 2023-07-26 10:00 |  | start no earlier than 2023-07-26 09:00 | 3D аниматор; Web-дизайнер; Ведущий программист; Мультимедиа-корреспондент; Системный аналитик; Художник-дизайнер; Технический писатель | 7h | 691 |
| 51 | 11.23 | Совещание 23 | manual | 1h | 2023-08-02 09:00 | 2023-08-02 10:00 |  | start no earlier than 2023-08-02 09:00 | 3D аниматор; Web-дизайнер; Ведущий программист; Мультимедиа-корреспондент; Системный аналитик; Художник-дизайнер; Технический писатель | 7h | 691 |
| 52 | 11.24 | Совещание 24 | manual | 1h | 2023-08-09 09:00 | 2023-08-09 10:00 |  | start no earlier than 2023-08-09 09:00 | 3D аниматор; Web-дизайнер; Ведущий программист; Мультимедиа-корреспондент; Системный аналитик; Художник-дизайнер; Технический писатель | 7h | 691 |
| 53 | 11.25 | Совещание 25 | manual | 1h | 2023-08-16 09:00 | 2023-08-16 10:00 |  | start no earlier than 2023-08-16 09:00 | 3D аниматор; Web-дизайнер; Ведущий программист; Мультимедиа-корреспондент; Системный аналитик; Художник-дизайнер; Технический писатель | 7h | 691 |
| 54 | 11.26 | Совещание 26 | manual | 1h | 2023-08-23 09:00 | 2023-08-23 10:00 |  | start no earlier than 2023-08-23 09:00 | 3D аниматор; Web-дизайнер; Ведущий программист; Мультимедиа-корреспондент; Системный аналитик; Художник-дизайнер; Технический писатель | 7h | 691 |
| 55 | 11.27 | Совещание 27 | manual | 1h | 2023-08-30 09:00 | 2023-08-30 10:00 |  | start no earlier than 2023-08-30 09:00 | 3D аниматор; Web-дизайнер; Ведущий программист; Мультимедиа-корреспондент; Системный аналитик; Художник-дизайнер; Технический писатель | 7h | 691 |
| 56 | 11.28 | Совещание 28 | manual | 1h | 2023-09-06 09:00 | 2023-09-06 10:00 |  | start no earlier than 2023-09-06 09:00 | 3D аниматор; Web-дизайнер; Ведущий программист; Мультимедиа-корреспондент; Системный аналитик; Художник-дизайнер; Технический писатель | 7h | 691 |
| 57 | 11.29 | Совещание 29 | manual | 1h | 2023-09-13 09:00 | 2023-09-13 10:00 |  | start no earlier than 2023-09-13 09:00 | 3D аниматор; Web-дизайнер; Ведущий программист; Мультимедиа-корреспондент; Системный аналитик; Художник-дизайнер; Технический писатель | 7h | 691 |
