# task3.3.2

Schedule from MS Project, 2023-03-01 to 2023-07-18, costs in ₽.
Cозданием карты города на основе собственного модуля отображения
Команда разработчиков из 16 человек занимается созданием карты города на основе собственного модуля отображения. Проект должен быть завершен в течение 6 месяцев. Бюджет проекта: 50 000 рублей.

## Calendars

- Стандартный: Mon-Fri 09:00-13:00, 14:00-18:00; Sat-Sun off. Exceptions (off unless hours are given): 2023-03-08 (Международный женский день), 2023-04-29 to 2023-05-01 (Праздник Весны и Труда), 2023-05-06 to 2023-05-09 (День Победы), 2023-06-10 to 2023-06-12 (День России).

## Resources

| Resource | Group | Rate | Cost per use |
| --- | --- | --- | --- |
| Программист#1 | Программирование | 7 | 50 |
| Программист#2 | Программирование | 7 | 50 |
| Ведущий программист | Программирование | 10 | 100 |
| Программист#3 | Программирование | 7 | 50 |
| Программист#4 | Программирование | 7 | 50 |
| Системный аналитик | Анализ | 20 | 300 |
| Художник-дизайнер | Дизайн | 8 | 70 |
| Технический писатель | Документация | 5 | 20 |
| Web-дизайнер | Internet | 7 | 50 |
| 3D аниматор | Дизайн | 8 | 70 |
| Мультимедиа-корреспондент | М-медиа | 3 | 20 |
| Наборщик данных#1 | Ввод данных | 2 | 10 |
| Наборщик данных#2 | Ввод данных | 2 | 10 |
| Наборщик данных#3 | Ввод данных | 2 | 10 |
| Наборщик данных#4 | Ввод данных | 2 | 10 |
| Наборщик данных#5 | Ввод данных | 2 | 10 |
| Дополнительный сервер |  | 2 |  |

## Schedule

| ID | WBS | Task | Type | Duration | Start | Finish | Predecessors | Total slack | Free slack | Resources | Work | Cost |
| --- | --- | --- | --- | --- | --- | --- | --- | --- | --- | --- | --- | --- |
| 1 | 1 | Начало проекта | milestone | 0w | 2023-03-01 09:00 | 2023-03-01 09:00 |  | 38.68d | 0.12d |  |  |  |
| 2 | 2 | **Создание интерфейса** |  | 72.29d | 2023-03-01 10:00 | 2023-06-16 12:21 | 1 | 0d |  |  | 560h | 5,650 |
| 3 | 2.1 | **Разработка дизайна интерфейса** |  | 25.5d | 2023-03-01 10:00 | 2023-04-06 15:00 |  | 38.55d | 0d |  | 320h | 2,770 |
| 4 | 2.1.1 | Разработка 2D графических элементов |  | 3w | 2023-03-01 10:00 | 2023-03-23 12:00 |  | 38.55d | 0d | Художник-дизайнер | 120h | 1,030 |
| 5 | 2.1.2 | Разработка 3D графических элементов |  | 2w | 2023-03-01 10:00 | 2023-03-16 11:00 | 4SS | 38.55d | 0d | 3D аниматор | 80h | 710 |
| 6 | 2.1.3 | Создание заставки |  | 3w | 2023-03-16 12:00 | 2023-04-06 15:00 | 5 | 38.55d |  | 3D аниматор | 120h | 1,030 |
| 7 | 2.2 | Программирование интерфейса |  | 1.5w | 2023-06-05 17:21 | 2023-06-16 12:21 | 3, 12 | 0d |  | Программист#3; Программист#4; Программист#1; Программист#2 | 240h | 1,880 |
| 8 | 3 | **Построение базы объектов** |  | 78.97d | 2023-03-23 14:00 | 2023-07-18 12:47 |  | 0.45d |  | Дополнительный сервер | 5526.79h | 15,243.58 |
| 9 | 3.1 | Анализ и построение структуры базы объектов |  | 2w | 2023-03-23 14:00 | 2023-04-06 15:00 |  | 0.45d | 0d | Системный аналитик | 80h | 1,900 |
| 10 | 3.2 | Программирование средств обработки базы объектов |  | 1.52w | 2023-04-06 15:00 | 2023-04-19 12:47 | 9 | 0.45d | 0d | Программист#3; Программист#4; Программист#1; Программист#2 | 240h | 1,880 |
| 11 | 3.3 | Наполнение базы объектов |  | 12w | 2023-04-19 12:47 | 2023-07-18 12:47 | 10 | 0.45d |  | Наборщик данных#1; Наборщик данных#2; Наборщик данных#3; Наборщик данных#4; Наборщик данных#5 | 2400h | 4,850 |
| 12 | 4 | **Создание ядра GIS** |  | 64.79d | 2023-03-01 10:00 | 2023-06-05 17:21 |  | 0d |  |  | 1880h | 18,229.33 |
| 13 | 4.1 | Анализ и проектирование ядра |  | 3w | 2023-03-01 10:00 | 2023-03-23 12:00 |  | 0d |  | Системный аналитик; Ведущий программист | 240h | 4,000 |
| 14 | 4.2 | Создание модели ядра |  | 2.02w | 2023-03-23 12:00 | 2023-04-06 12:49 | 13 | 0d |  | Программист#1; Ведущий программист; Программист#2; Программист#3; Программист#4 | 400h | 3,336.46 |
| 15 | 4.3 | Тестирование модели ядра |  | 0.25w | 2023-04-06 12:49 | 2023-04-07 15:49 | 14 | 0d |  | Программист#1; Программист#2; Программист#3; Программист#4 | 40h | 480 |
| 16 | 4.4 | Создание рабочей версии ядра |  | 7.59w | 2023-04-07 15:49 | 2023-06-05 17:21 | 15 | 0d |  | Ведущий программист; Программист#1; Программист#2; Программист#3; Программист#4 | 1200h | 9,412.87 |
| 17 | 5 | Создание мультимедиа – наполнения |  | 6w | 2023-04-06 15:00 | 2023-05-24 12:00 | 3 | 38.55d |  | Мультимедиа-корреспондент | 240h | 740 |
| 18 | 6 | Создание справочной системы |  | 2w | 2023-06-27 16:21 | 2023-07-11 16:21 | 7 | 5.13d |  | Технический писатель | 80h | 420 |
| 19 | 7 | **Создание руководства пользователя** |  | 17.25d | 2023-06-01 12:21 | 2023-06-27 15:21 | 7FS-10d | 0d |  |  | 160h | 1,010 |
| 20 | 7.1 | Разработка дизайна руководства |  | 1w | 2023-06-01 12:21 | 2023-06-08 12:21 |  | 0d |  | Художник-дизайнер | 40h | 390 |
| 21 | 7.2 | Написание руководства пользователя |  | 3w | 2023-06-05 12:21 | 2023-06-27 15:21 | 20SS+2d | 0d |  | Технический писатель | 120h | 620 |
| 22 | 8 | **Создание web – сайта и поддержка** |  | 23.38d | 2023-06-05 12:21 | 2023-07-07 16:21 |  | 0d |  |  | 248h | 2,106 |
| 23 | 8.1 | Разработка структуры сайта |  | 1d | 2023-06-05 12:21 | 2023-06-06 12:21 | 21SS | 0d |  | Web-дизайнер | 8h | 106 |
| 24 | 8.2 | Разработка дизайна сайта |  | 1.43w | 2023-06-06 12:21 | 2023-06-16 14:21 | 23 | 0d |  | Художник-дизайнер; 3D аниматор; Web-дизайнер | 120h | 1,110 |
| 25 | 8.3 | Наполнение сайта |  | 3w | 2023-06-16 14:21 | 2023-07-07 16:21 | 24 | 0d |  | Web-дизайнер | 120h | 890 |
| 26 | 9 | Тестирование сайта |  | 2.43w | 2023-06-30 16:21 | 2023-07-18 17:25 | 22FS-1w | 0d |  | Ведущий программист; Программист#1; Программист#2; Программист#3; Программист#4 | 480h | 3,945.85 |
| 27 | 10 | Сдача сайта в эксплуатацию | milestone | 0w | 2023-07-18 17:25 | 2023-07-18 17:25 | 26 | 0d |  |  |  |  |

| ID | WBS | Task | Type | Duration | Start | Finish | Total slack | Constraint | Resources | Work | Cost |
| --- | --- | --- | --- | --- | --- | --- | --- | --- | --- | --- | --- |
| 28 | 11 | **Совещание** |  | 90.12d | 2023-03-01 09:00 | 2023-07-12 10:00 | 0d |  |  | 126h | 12,438 |
| 29 | 11.1 | Совещание 1 | manual | 1h | 2023-03-01 09:00 | 2023-03-01 10:00 |  | start no earlier than 2023-03-01 09:00 | 3D аниматор; Web-дизайнер; Ведущий программист; Мультимедиа-корреспондент; Системный аналитик; Технический писатель; Художник-дизайнер | 7h | 691 |
| 30 | 11.2 | Совещание 2 | manual | 1h | 2023-03-08 09:00 | 2023-03-08 10:00 |  | start no earlier than 2023-03-08 09:00 | 3D аниматор; Web-дизайнер; Ведущий программист; Мультимедиа-корреспондент; Системный аналитик; Технический писатель; Художник-дизайнер | 7h | 691 |
| 31 | 11.3 | Совещание 3 | manual | 1h | 2023-03-15 09:00 | 2023-03-15 10:00 |  | start no earlier than 2023-03-15 09:00 | 3D аниматор; Web-дизайнер; Ведущий программист; Мультимедиа-корреспондент; Системный аналитик; Технический писатель; Художник-дизайнер | 7h | 691 |
| 32 | 11.4 | Совещание 4 | manual | 1h | 2023-03-22 09:00 | 2023-03-22 10:00 |  | start no earlier than 2023-03-22 09:00 | 3D аниматор; Web-дизайнер; Ведущий программист; Мультимедиа-корреспондент; Системный аналитик; Технический писатель; Художник-дизайнер | 7h | 691 |
| 33 | 11.5 | Совещание 5 | manual | 1h | 2023-03-29 09:00 | 2023-03-29 10:00 |  | start no earlier than 2023-03-29 09:00 | 3D аниматор; Web-дизайнер; Ведущий программист; Мультимедиа-корреспондент; Системный аналитик; Технический писатель; Художник-дизайнер | 7h | 691 |
| 34 | 11.6 | Совещание 6 | manual | 1h | 2023-04-05 09:00 | 2023-04-05 10:00 |  | start no earlier than 2023-04-05 09:00 | 3D аниматор; Web-дизайнер; Ведущий программист; Мультимедиа-корреспондент; Системный аналитик; Технический писатель; Художник-дизайнер | 7h | 691 |
| 35 | 11.7 | Совещание 7 | manual | 1h | 2023-04-12 09:00 | 2023-04-12 10:00 |  | start no earlier than 2023-04-12 09:00 | 3D аниматор; Web-дизайнер; Ведущий программист; Мультимедиа-корреспондент; Системный аналитик; Технический писатель; Художник-дизайнер | 7h | 691 |
| 36 | 11.8 | Совещание 8 | manual | 1h | 2023-04-19 09:00 | 2023-04-19 10:00 |  | start no earlier than 2023-04-19 09:00 | 3D аниматор; Web-дизайнер; Ведущий программист; Мультимедиа-корреспондент; Системный аналитик; Технический писатель; Художник-дизайнер | 7h | 691 |
| 37 | 11.9 | Совещание 9 | manual | 1h | 2023-04-26 09:00 | 2023-04-26 10:00 |  | start no earlier than 2023-04-26 09:00 | 3D аниматор; Web-дизайнер; Ведущий программист; Мультимедиа-корреспондент; Системный аналитик; Технический писатель; Художник-дизайнер | 7h | 691 |
| 38 | 11.10 | Совещание 10 | manual | 1h | 2023-05-03 09:00 | 2023-05-03 10:00 |  | start no earlier than 2023-05-03 09:00 | 3D аниматор; Web-дизайнер; Ведущий программист; Мультимедиа-корреспондент; Системный аналитик; Технический писатель; Художник-дизайнер | 7h | 691 |
| 39 | 11.11 | Совещание 11 | manual | 1h | 2023-05-10 09:00 | 2023-05-10 10:00 |  | start no earlier than 2023-05-10 09:00 | 3D аниматор; Web-дизайнер; Ведущий программист; Мультимедиа-корреспондент; Системный аналитик; Технический писатель; Художник-дизайнер | 7h | 691 |
| 40 | 11.12 | Совещание 12 | manual | 1h | 2023-05-17 09:00 | 2023-05-17 10:00 |  | start no earlier than 2023-05-17 09:00 | 3D аниматор; Web-дизайнер; Ведущий программист; Мультимедиа-корреспондент; Системный аналитик; Технический писатель; Художник-дизайнер | 7h | 691 |
| 41 | 11.13 | Совещание 13 | manual | 1h | 2023-05-24 09:00 | 2023-05-24 10:00 |  | start no earlier than 2023-05-24 09:00 | 3D аниматор; Web-дизайнер; Ведущий программист; Мультимедиа-корреспондент; Системный аналитик; Технический писатель; Художник-дизайнер | 7h | 691 |
| 42 | 11.14 | Совещание 14 | manual | 1h | 2023-05-31 09:00 | 2023-05-31 10:00 |  | start no earlier than 2023-05-31 09:00 | 3D аниматор; Web-дизайнер; Ведущий программист; Мультимедиа-корреспондент; Системный аналитик; Технический писатель; Художник-дизайнер | 7h | 691 |
| 43 | 11.15 | Совещание 15 | manual | 1h | 2023-06-07 09:00 | 2023-06-07 10:00 |  | start no earlier than 2023-06-07 09:00 | 3D аниматор; Web-дизайнер; Ведущий программист; Мультимедиа-корреспондент; Системный аналитик; Технический писатель; Художник-дизайнер | 7h | 691 |
| 44 | 11.16 | Совещание 16 | manual | 1h | 2023-06-14 09:00 | 2023-06-14 10:00 |  | start no earlier than 2023-06-14 09:00 | 3D аниматор; Web-дизайнер; Ведущий программист; Мультимедиа-корреспондент; Системный аналитик; Технический писатель; Художник-дизайнер | 7h | 691 |
| 45 | 11.17 | Совещание 17 | manual | 1h | 2023-06-21 09:00 | 2023-06-21 10:00 |  | start no earlier than 2023-06-21 09:00 | 3D аниматор; Web-дизайнер; Ведущий программист; Мультимедиа-корреспондент; Системный аналитик; Технический писатель; Художник-дизайнер | 7h | 691 |
| 46 | 11.18 | Совещание 18 | manual | 1h | 2023-06-28 09:00 | 2023-06-28 10:00 |  | start no earlier than 2023-06-28 09:00 | 3D аниматор; Web-дизайнер; Ведущий программист; Мультимедиа-корреспондент; Системный аналитик; Технический писатель; Художник-дизайнер | 7h | 691 |
| 47 | 11.19 | Совещание 19 | manual | 1h | 2023-07-05 09:00 | 2023-07-05 10:00 |  | start no earlier than 2023-07-05 09:00 |  |  |  |
| 48 | 11.20 | Совещание 20 | manual | 1h | 2023-07-12 09:00 | 2023-07-12 10:00 |  | start no earlier than 2023-07-12 09:00 |  |  |  |
