# task22

Schedule from MS Project, 2023-03-01 to 2023-07-18, costs in ₽.
Cозданием карты города на основе собственного модуля отображения
Команда разработчиков из 16 человек занимается созданием карты города на основе собственного модуля отображения. Проект должен быть завершен в течение 6 месяцев. Бюджет проекта: 50 000 рублей.

## Calendars

- Стандартный: Mon-Fri 09:00-13:00, 14:00-18:00; Sat-Sun off. Exceptions (off unless hours are given): 2023-03-08 (Международный женский день), 2023-04-29 to 2023-05-01 (Праздник Весны и Труда), 2023-05-06 to 2023-05-09 (День Победы), 2023-06-10 to 2023-06-12 (День России).

## Resources

| Resource | Group | Rate | Cost per use |
| --- | --- | --- | --- |
| Программист#1 | Программирование | 7 | 50 |
| Программист#2 | Программирование | 7 | 50 |
| Ведущий программист | Программирование | 10 | 100 |
| Программист#3 | Программирование | 7 | 50 |
| Программист#4 | Программирование | 7 | 50 |
| Системный аналитик | Анализ | 20 | 300 |
| Художник-дизайнер | Дизайн | 8 | 70 |
| Технический писатель | Документация | 5 | 20 |
| Web-дизайнер | Internet | 7 | 50 |
| 3D аниматор | Дизайн | 8 | 70 |
| Мультимедиа-корреспондент | М-медиа | 3 | 20 |
| Наборщик данных#1 | Ввод данных | 2 | 10 |
| Наборщик данных#2 | Ввод данных | 2 | 10 |
| Наборщик данных#3 | Ввод данных | 2 | 10 |
| Наборщик данных#4 | Ввод данных | 2 | 10 |
| Наборщик данных#5 | Ввод данных | 2 | 10 |
| Дополнительный сервер |  | 2 |  |

## Schedule

| ID | WBS | Task | Type | Duration | Start | Finish | Predecessors | Total slack | Free slack | Resources | Work | Cost |
| --- | --- | --- | --- | --- | --- | --- | --- | --- | --- | --- | --- | --- |
| 1 | 1 | Начало проекта | milestone | 0w | 2023-03-01 09:00 | 2023-03-01 09:00 |  | 38.1d | 0.12d |  |  |  |
| 2 | 2 | **Создание интерфейса** |  | 72.17d | 2023-03-01 10:00 | 2023-06-16 11:23 | 1 | 1.39d |  |  | 560h | 5,650 |
| 3 | 2.1 | **Разработка дизайна интерфейса** |  | 25.5d | 2023-03-01 10:00 | 2023-04-06 15:00 |  | 37.98d | 0d |  | 320h | 2,770 |
| 4 | 2.1.1 | Разработка 2D графических элементов |  | 3w | 2023-03-01 10:00 | 2023-03-23 12:00 |  | 37.98d | 0d | Художник-дизайнер | 120h | 1,030 |
| 5 | 2.1.2 | Разработка 3D графических элементов |  | 2w | 2023-03-01 10:00 | 2023-03-16 11:00 | 4SS | 37.98d | 0d | 3D аниматор | 80h | 710 |
| 6 | 2.1.3 | Создание заставки |  | 3w | 2023-03-16 12:00 | 2023-04-06 15:00 | 5 | 37.98d |  | 3D аниматор | 120h | 1,030 |
| 7 | 2.2 | Программирование интерфейса |  | 1.5w | 2023-06-05 16:23 | 2023-06-16 11:23 | 3, 12 | 1.39d | 0d | Программист#3; Программист#4; Программист#1; Программист#2 | 240h | 1,880 |
| 8 | 3 | **Построение базы объектов** |  | 78.85d | 2023-03-23 14:00 | 2023-07-18 11:49 |  | 0d |  | Дополнительный сервер | 5525.82h | 15,241.64 |
| 9 | 3.1 | Анализ и построение структуры базы объектов |  | 2w | 2023-03-23 14:00 | 2023-04-06 15:00 |  | 0d |  | Системный аналитик | 80h | 1,900 |
| 10 | 3.2 | Программирование средств обработки базы объектов |  | 1.5w | 2023-04-07 16:49 | 2023-04-19 11:49 | 9 | 0d |  | Программист#3; Программист#4; Программист#1; Программист#2 | 240h | 1,880 |
| 11 | 3.3 | Наполнение базы объектов |  | 12w | 2023-04-19 11:49 | 2023-07-18 11:49 | 10 | 0d |  | Наборщик данных#1; Наборщик данных#2; Наборщик данных#3; Наборщик данных#4; Наборщик данных#5 | 2400h | 4,850 |
| 12 | 4 | **Создание ядра GIS** |  | 64.67d | 2023-03-01 10:00 | 2023-06-05 16:23 |  | 1.39d | 0d |  | 1880h | 18,229.33 |
| 13 | 4.1 | Анализ и проектирование ядра |  | 3w | 2023-03-01 10:00 | 2023-03-23 12:00 |  | 1.39d | 0d | Системный аналитик; Ведущий программист | 240h | 4,000 |
| 14 | 4.2 | Создание модели ядра |  | 2.05w | 2023-03-23 12:00 | 2023-04-06 14:49 | 13 | 1.39d | 0d | Программист#1; Ведущий программист; Программист#2; Программист#3; Программист#4 | 400h | 3,336.46 |
| 15 | 4.3 | Тестирование модели ядра |  | 0.25w | 2023-04-06 14:49 | 2023-04-07 16:49 | 14 | 1.39d | 0d | Программист#1; Программист#2; Программист#3; Программист#4 | 40h | 480 |
| 16 | 4.4 | Создание рабочей версии ядра |  | 7.54w | 2023-04-07 17:49 | 2023-06-05 16:23 | 15 | 1.39d |  | Ведущий программист; Программист#1; Программист#2; Программист#3; Программист#4 | 1200h | 9,412.87 |
| 17 | 5 | Создание мультимедиа – наполнения |  | 6w | 2023-04-06 15:00 | 2023-05-24 12:00 | 3 | 37.98d |  | Мультимедиа-корреспондент | 240h | 740 |
| 18 | 6 | Создание справочной системы |  | 2w | 2023-06-27 15:23 | 2023-07-11 16:23 | 7 | 4.55d |  | Технический писатель | 80h | 420 |
| 19 | 7 | **Создание руководства пользователя** |  | 17.25d | 2023-06-01 11:23 | 2023-06-27 14:23 | 7FS-10d | 1.39d |  |  | 160h | 1,010 |
| 20 | 7.1 | Разработка дизайна руководства |  | 1w | 2023-06-01 11:23 | 2023-06-26 10:23 |  | 1.39d | 0d | Художник-дизайнер | 40h | 390 |
| 21 | 7.2 | Написание руководства пользователя |  | 3w | 2023-06-05 11:23 | 2023-06-27 14:23 | 20SS+2d | 1.39d | 0d | Технический писатель | 120h | 620 |
| 22 | 8 | **Создание web – сайта и поддержка** |  | 21.45d | 2023-06-05 11:23 | 2023-07-05 16:00 |  | 1.39d | 0d |  | 248h | 2,106 |
| 23 | 8.1 | Разработка структуры сайта |  | 1d | 2023-06-05 11:23 | 2023-06-06 11:23 | 21SS | 1.39d | 0d | Web-дизайнер | 8h | 106 |
| 24 | 8.2 | Разработка дизайна сайта |  | 1.02w | 2023-06-06 11:23 | 2023-06-14 12:23 | 23 | 1.39d | 0.08d | Художник-дизайнер; 3D аниматор; Web-дизайнер | 120h | 1,110 |
| 25 | 8.3 | Наполнение сайта |  | 3w | 2023-06-14 14:00 | 2023-07-05 16:00 | 24 | 1.44d |  | Web-дизайнер | 120h | 890 |
| 26 | 9 | Тестирование сайта |  | 2.43w | 2023-06-28 16:00 | 2023-07-14 17:17 | 22FS-1w | 1.44d | 0d | Ведущий программист; Программист#1; Программист#2; Программист#3; Программист#4 | 480h | 3,945.85 |
| 27 | 10 | Сдача сайта в эксплуатацию | milestone | 0w | 2023-07-14 17:17 | 2023-07-14 17:17 | 26 | 1.44d |  |  |  |  |

| ID | WBS | Task | Type | Duration | Start | Finish | Total slack | Constraint | Resources | Work | Cost |
| --- | --- | --- | --- | --- | --- | --- | --- | --- | --- | --- | --- |
| 28 | 11 | **Совещание** |  | 90.12d | 2023-03-01 09:00 | 2023-07-12 10:00 | 0d |  |  | 140h | 1,220 |
| 29 | 11.1 | Совещание 1 | manual | 1h | 2023-03-01 09:00 | 2023-03-01 10:00 |  | start no earlier than 2023-03-01 09:00 | 3D аниматор; Web-дизайнер; Ведущий программист; Мультимедиа-корреспондент; Системный аналитик; Художник-дизайнер; Технический писатель | 7h | 61 |
| 30 | 11.2 | Совещание 2 | manual | 1h | 2023-03-08 09:00 | 2023-03-08 10:00 |  | start no earlier than 2023-03-08 09:00 | 3D аниматор; Web-дизайнер; Ведущий программист; Мультимедиа-корреспондент; Системный аналитик; Художник-дизайнер; Технический писатель | 7h | 61 |
| 31 | 11.3 | Совещание 3 | manual | 1h | 2023-03-15 09:00 | 2023-03-15 10:00 |  | start no earlier than 2023-03-15 09:00 | 3D аниматор; Web-дизайнер; Ведущий программист; Мультимедиа-корреспондент; Системный аналитик; Художник-дизайнер; Технический писатель | 7h | 61 |
| 32 | 11.4 | Совещание 4 | manual | 1h | 2023-03-22 09:00 | 2023-03-22 10:00 |  | start no earlier than 2023-03-22 09:00 | 3D аниматор; Web-дизайнер; Ведущий программист; Мультимедиа-корреспондент; Системный аналитик; Художник-дизайнер; Технический писатель | 7h | 61 |
| 33 | 11.5 | Совещание 5 | manual | 1h | 2023-03-29 09:00 | 2023-03-29 10:00 |  | start no earlier than 2023-03-29 09:00 | 3D аниматор; Web-дизайнер; Ведущий программист; Мультимедиа-корреспондент; Системный аналитик; Художник-дизайнер; Технический писатель | 7h | 61 |
| 34 | 11.6 | Совещание 6 | manual | 1h | 2023-04-05 09:00 | 2023-04-05 10:00 |  | start no earlier than 2023-04-05 09:00 | 3D аниматор; Web-дизайнер; Ведущий программист; Мультимедиа-корреспондент; Системный аналитик; Художник-дизайнер; Технический писатель | 7h | 61 |
| 35 | 11.7 | Совещание 7 | manual | 1h | 2023-04-12 09:00 | 2023-04-12 10:00 |  | start no earlier than 2023-04-12 09:00 | 3D аниматор; Web-дизайнер; Ведущий программист; Мультимедиа-корреспондент; Системный аналитик; Художник-дизайнер; Технический писатель | 7h | 61 |
| 36 | 11.8 | Совещание 8 | manual | 1h | 2023-04-19 09:00 | 2023-04-19 10:00 |  | start no earlier than 2023-04-19 09:00 | 3D аниматор; Web-дизайнер; Ведущий программист; Мультимедиа-корреспондент; Системный аналитик; Художник-дизайнер; Технический писатель | 7h | 61 |
| 37 | 11.9 | Совещание 9 | manual | 1h | 2023-04-26 09:00 | 2023-04-26 10:00 |  | start no earlier than 2023-04-26 09:00 | 3D аниматор; Web-дизайнер; Ведущий программист; Мультимедиа-корреспондент; Системный аналитик; Художник-дизайнер; Технический писатель | 7h | 61 |
| 38 | 11.10 | Совещание 10 | manual | 1h | 2023-05-03 09:00 | 2023-05-03 10:00 |  | start no earlier than 2023-05-03 09:00 | 3D аниматор; Web-дизайнер; Ведущий программист; Мультимедиа-корреспондент; Системный аналитик; Художник-дизайнер; Технический писатель | 7h | 61 |
| 39 | 11.11 | Совещание 11 | manual | 1h | 2023-05-10 09:00 | 2023-05-10 10:00 |  | start no earlier than 2023-05-10 09:00 | 3D аниматор; Web-дизайнер; Ведущий программист; Мультимедиа-корреспондент; Системный аналитик; Художник-дизайнер; Технический писатель | 7h | 61 |
| 40 | 11.12 | Совещание 12 | manual | 1h | 2023-05-17 09:00 | 2023-05-17 10:00 |  | start no earlier than 2023-05-17 09:00 | 3D аниматор; Web-дизайнер; Ведущий программист; Мультимедиа-корреспондент; Системный аналитик; Художник-дизайнер; Технический писатель | 7h | 61 |
| 41 | 11.13 | Совещание 13 | manual | 1h | 2023-05-24 09:00 | 2023-05-24 10:00 |  | start no earlier than 2023-05-24 09:00 | 3D аниматор; Web-дизайнер; Ведущий программист; Мультимедиа-корреспондент; Системный аналитик; Художник-дизайнер; Технический писатель | 7h | 61 |
| 42 | 11.14 | Совещание 14 | manual | 1h | 2023-05-31 09:00 | 2023-05-31 10:00 |  | start no earlier than 2023-05-31 09:00 | 3D аниматор; Web-дизайнер; Ведущий программист; Мультимедиа-корреспондент; Системный аналитик; Художник-дизайнер; Технический писатель | 7h | 61 |
| 43 | 11.15 | Совещание 15 | manual | 1h | 2023-06-07 09:00 | 2023-06-07 10:00 |  | start no earlier than 2023-06-07 09:00 | 3D аниматор; Web-дизайнер; Ведущий программист; Мультимедиа-корреспондент; Системный аналитик; Художник-дизайнер; Технический писатель | 7h | 61 |
| 44 | 11.16 | Совещание 16 | manual | 1h | 2023-06-14 09:00 | 2023-06-14 10:00 |  | start no earlier than 2023-06-14 09:00 | 3D аниматор; Web-дизайнер; Ведущий программист; Мультимедиа-корреспондент; Системный аналитик; Художник-дизайнер; Технический писатель | 7h | 61 |
| 45 | 11.17 | Совещание 17 | manual | 1h | 2023-06-21 09:00 | 2023-06-21 10:00 |  | start no earlier than 2023-06-21 09:00 | 3D аниматор; Web-дизайнер; Ведущий программист; Мультимедиа-корреспондент; Системный аналитик; Художник-дизайнер; Технический писатель | 7h | 61 |
| 46 | 11.18 | Совещание 18 | manual | 1h | 2023-06-28 09:00 | 2023-06-28 10:00 |  | start no earlier than 2023-06-28 09:00 | 3D аниматор; Web-дизайнер; Ведущий программист; Мультимедиа-корреспондент; Системный аналитик; Художник-дизайнер; Технический писатель | 7h | 61 |
| 47 | 11.19 | Совещание 19 | manual | 1h | 2023-07-05 09:00 | 2023-07-05 10:00 |  | start no earlier than 2023-07-05 09:00 | 3D аниматор; Web-дизайнер; Ведущий программист; Мультимедиа-корреспондент; Системный аналитик; Художник-дизайнер; Технический писатель | 7h | 61 |
| 48 | 11.20 | Совещание 20 | manual | 1h | 2023-07-12 09:00 | 2023-07-12 10:00 |  | start no earlier than 2023-07-12 09:00 | 3D аниматор; Web-дизайнер; Ведущий программист; Мультимедиа-корреспондент; Системный аналитик; Художник-дизайнер; Технический писатель | 7h | 61 |
