# task2

Schedule from MS Project, 2023-03-01 to 2023-09-15, costs in ₽.
Cозданием карты города на основе собственного модуля отображения
Команда разработчиков из 16 человек занимается созданием карты города на основе собственного модуля отображения. Проект должен быть завершен в течение 6 месяцев. Бюджет проекта: 50 000 рублей.

## Calendars

- Стандартный: Mon-Fri 09:00-13:00, 14:00-18:00; Sat-Sun off. Exceptions (off unless hours are given): 2023-03-08 (Международный женский день), 2023-04-29 to 2023-05-01 (Праздник Весны и Труда), 2023-05-06 to 2023-05-09 (День Победы), 2023-06-10 to 2023-06-12 (День России).

## Resources

| Resource | Group | Rate | Cost per use |
| --- | --- | --- | --- |
| Программист#1 | Программирование | 7 | 50 |
| Программист#2 | Программирование | 7 | 50 |
| Ведущий программист | Программирование | 10 | 100 |
| Программист#3 | Программирование | 7 | 50 |
| Программист#4 | Программирование | 7 | 50 |
| Системный аналитик | Анализ | 20 | 300 |
| Художник-дизайнер | Дизайн | 8 | 70 |
| Технический писатель | Документация | 5 | 20 |
| Web-дизайнер | Internet | 7 | 50 |
| 3D аниматор | Дизайн | 8 | 70 |
| Мультимедиа-корреспондент | М-медиа | 3 | 20 |
| Наборщик данных#1 | Ввод данных | 2 | 10 |
| Наборщик данных#2 | Ввод данных | 2 | 10 |
| Наборщик данных#3 | Ввод данных | 2 | 10 |
| Наборщик данных#4 | Ввод данных | 2 | 10 |
| Наборщик данных#5 | Ввод данных | 2 | 10 |
| Дополнительный сервер |  | 2 |  |

## Schedule

| ID | WBS | Task | Type | Duration | Start | Finish | Predecessors | Total slack | Free slack | Resources | Work | Cost |
| --- | --- | --- | --- | --- | --- | --- | --- | --- | --- | --- | --- | --- |
| 1 | 1 | Начало проекта | milestone | 0w | 2023-03-01 | 2023-03-01 |  | 70d | 0d |  |  |  |
| 2 | 2 | **Проектирование** |  | 103d | 2023-03-01 | 2023-07-28 |  | 0d |  |  | 328h | 6,006 |
| 3 | 2.1 | Анализ и проектирование ядра |  | 3w | 2023-03-01 | 2023-03-22 |  | 0d |  | Системный аналитик; Ведущий программист | 240h | 4,000 |
| 4 | 2.2 | Анализ и построение структуры базы объектов |  | 2w | 2023-03-23 | 2023-04-05 |  | 38d | 0d | Системный аналитик | 80h | 1,900 |
| 5 | 2.3 | Разработка структуры сайта |  | 1d | 2023-07-28 | 2023-07-28 | 20SS | 0d |  | Web-дизайнер | 8h | 106 |
| 6 | 3 | **Дизайн** |  | 108d | 2023-03-01 | 2023-08-04 |  | 0d |  |  | 320h | 3,850 |
| 7 | 3.1 | Разработка дизайна сайта |  | 1w | 2023-07-31 | 2023-08-04 | 5 | 0d |  | Художник-дизайнер; 3D аниматор; Web-дизайнер | 120h | 1,110 |
| 8 | 3.2 | Разработка 2D графических элементов |  | 3w | 2023-03-01 | 2023-03-22 |  | 83d | 0d | Художник-дизайнер | 120h | 1,030 |
| 9 | 3.3 | Разработка 3D графических элементов |  | 2w | 2023-03-01 | 2023-03-15 | 8SS | 83d | 0d | 3D аниматор | 80h | 710 |
| 10 | 4 | **Разработка** |  | 113d | 2023-03-16 | 2023-08-25 |  | 5d |  |  | 2320h | 18,790 |
| 11 | 4.1 | Создание модели ядра |  | 5w | 2023-03-23 | 2023-04-26 | 3 | 0d |  | Программист#1; Ведущий программист | 400h | 3,550 |
| 12 | 4.2 | Создание заставки |  | 3w | 2023-03-16 | 2023-04-05 | 9 | 83d | 0d | 3D аниматор | 120h | 1,030 |
| 13 | 4.3 | Наполнение сайта |  | 3w | 2023-08-07 | 2023-08-25 | 7 | 0d |  | Web-дизайнер | 120h | 890 |
| 14 | 4.4 | Создание мультимедиа – наполнения |  | 6w | 2023-04-06 | 2023-05-22 | 12 | 83d |  | Мультимедиа-корреспондент | 240h | 740 |
| 15 | 4.5 | Программирование интерфейса |  | 3w | 2023-07-19 | 2023-08-08 | 16 | 0d |  | Программист#3; Программист#4 | 240h | 1,780 |
| 16 | 4.6 | Создание рабочей версии ядра |  | 10w | 2023-05-05 | 2023-07-18 | 22 | 0d |  | Ведущий программист; Программист#1; Программист#2 | 1200h | 9,800 |
| 17 | 5 | **Руководство** |  | 27d | 2023-07-26 | 2023-08-31 |  | 0d |  |  | 240h | 1,430 |
| 18 | 5.1 | Создание справочной системы |  | 2w | 2023-08-18 | 2023-08-31 | 15 | 11d |  | Технический писатель | 80h | 420 |
| 19 | 5.2 | Разработка дизайна руководства |  | 1w | 2023-07-26 | 2023-08-08 | 15FS-10d | 0d |  | Художник-дизайнер | 40h | 390 |
| 20 | 5.3 | Написание руководства пользователя |  | 3w | 2023-07-28 | 2023-08-17 | 19SS+2d | 0d |  | Технический писатель | 120h | 620 |
| 21 | 6 | **Тестирование** |  | 98d | 2023-04-27 | 2023-09-15 |  | 0d |  |  | 520h | 4,370 |
| 22 | 6.1 | Тестирование модели ядра |  | 1w | 2023-04-27 | 2023-05-04 | 11 | 0d |  | Программист#1 | 40h | 330 |
| 23 | 6.2 | Тестирование сайта |  | 4w | 2023-08-21 | 2023-09-15 | 13FS-1w | 0d |  | Ведущий программист; Программист#1; Программист#2 | 480h | 4,040 |
| 24 | 7 | **Построение базы объектов** |  | 75d | 2023-04-06 | 2023-07-25 |  | 38d |  | Дополнительный сервер | 5289h | 12,928 |
| 25 | 7.1 | Программирование средств обработки базы объектов |  | 3w | 2023-04-06 | 2023-04-26 | 4 | 38d | 0d | Программист#3; Программист#4 | 240h | 1,780 |
| 26 | 7.2 | Наполнение базы объектов |  | 12w | 2023-04-27 | 2023-07-25 | 25 | 38d |  | Наборщик данных#1; Наборщик данных#2; Наборщик данных#3; Наборщик данных#4; Наборщик данных#5 | 2400h | 4,850 |
| 27 | 8 | Сдача сайта в эксплуатацию | milestone | 0w | 2023-09-15 | 2023-09-15 | 23 | 0d |  |  |  |  |
