# Карта города

Schedule from MS Project, 2023-03-01 to 2023-07-05, status date 2023-05-12, costs in ₽, A marks actual dates.
Команда разработчиков из 16 человек занимается созданием карты города на основе собственного модуля отображения. Проект должен быть завершен в течение 6 месяцев. Бюджет проекта: 50 000 рублей.

## Calendars

- Стандартный: Mon-Fri 09:00-13:00, 14:00-18:00; Sat-Sun off. Exceptions (off unless hours are given): 2023-03-08 (Международный женский день), 2023-04-29 to 2023-05-01 (Праздник Весны и Труда), 2023-05-06 to 2023-05-09 (День Победы), 2023-06-10 to 2023-06-12 (День России).

## Resources

| Resource | Group | Unit | Rate | Cost per use |
| --- | --- | --- | --- | --- |
| Ведущий программист | Программирование |  | 10 | 100 |
| Программист #1 | Программирование |  | 7 | 50 |
| Программист #2 | Программирование |  | 7 | 50 |
| Программист #3 | Программирование |  | 7 | 50 |
| Программист #4 | Программирование |  | 7 | 50 |
| Системный аналитик | Анализ |  | 20 | 300 |
| Художник-дизайнер | Дизайн |  | 8 | 70 |
| Технический писатель | Документация |  | 5 | 20 |
| Web-дизайнер | Internet |  | 7 | 50 |
| 3D аниматор | Дизайн |  | 8 | 70 |
| Мультимедиа-корреспондент | М-медиа |  | 3 | 20 |
| Наборщик данных #1 | Ввод данных |  | 2 | 10 |
| Наборщик данных #2 | Ввод данных |  | 2 | 10 |
| Наборщик данных #3 | Ввод данных |  | 2 | 10 |
| Наборщик данных #4 | Ввод данных |  | 2 | 10 |
| Наборщик данных #5 | Ввод данных |  | 2 | 10 |
| Сервер |  |  | 2 |  |
| Специализированное ПО |  |  |  |  |
| Пачка бумаги |  | шт | 100 |  |
| Программист #5 | Программирование |  | 7 | 50 |
| Программист #6 | Программирование |  | 7 | 50 |
| Наборщик данных #6 | Ввод данных |  | 2 | 10 |
| Наборщик данных #7 | Ввод данных |  | 2 | 10 |

## Schedule

| ID | WBS | Task | Type | Duration | Start | Finish | Predecessors | Complete | Remaining | Baseline start | Baseline finish | Baseline duration | Total slack | Free slack | Resources | Work | Actual work | Cost | Baseline cost | Actual cost |
| --- | --- | --- | --- | --- | --- | --- | --- | --- | --- | --- | --- | --- | --- | --- | --- | --- | --- | --- | --- | --- |
| 1 | 1 | Начало проекта | milestone | 0d | 2023-03-01 09:00 | 2023-03-01 09:00 |  |  |  | 2023-03-01 09:00 | 2023-03-01 09:00 | 0d | 10.38d | 0.12d |  |  |  |  |  |  |
| 2 | 2 | **Создание интерфейса** |  | 66.31d | 2023-03-01 10:00 A | 2023-06-07 12:27 | 1 | 36% | 42.46d | 2023-03-01 10:00 | 2023-06-19 15:33 | 73.57d | 0d |  |  | 560h | 120h | 5,650 | 5,650 | 1,390 |
| 3 | 2.1 | **Разработка дизайна интерфейса** |  | 28.88d | 2023-03-01 10:00 A | 2023-04-11 18:00 |  | 42% | 16.69d | 2023-03-01 10:00 | 2023-04-06 16:00 | 25.62d | 25.21d | 0d |  | 320h | 120h | 2,770 | 2,770 | 1,030 |
| 4 | 2.1.1 | Разработка 2D графических элементов |  | 3w | 2023-03-01 10:00 | 2023-03-23 13:00 |  |  |  | 2023-03-01 10:00 | 2023-03-23 13:00 | 3w | 38.71d | 0d | Художник-дизайнер | 120h |  | 1,030 | 1,030 |  |
| 5 | 2.1.2 | Разработка 3D графических элементов |  | 2w | 2023-03-01 10:00 | 2023-03-16 12:00 | 4SS |  |  | 2023-03-01 10:00 | 2023-03-16 12:00 | 2w | 43.84d |  | 3D аниматор | 80h |  | 710 | 710 |  |
| 6 | 2.1.3 | Создание заставки |  | 3.65w | 2023-03-16 12:00 A | 2023-04-11 18:00 A | 5 | 100% |  | 2023-03-16 12:00 | 2023-04-06 16:00 | 3w |  |  | 3D аниматор | 120h | 120h | 1,030 | 1,030 | 1,030 |
| 7 | 2.2 | Программирование интерфейса |  | 1.5w | 2023-05-26 17:27 | 2023-06-07 12:27 | 3, 12 |  |  | 2023-06-07 10:33 | 2023-06-19 15:33 | 1.5w | 0d |  | Программист #3; Программист #4; Программист #1; Программист #2 | 240h |  | 1,880 | 1,880 |  |
| 8 | 3 | **Построение базы объектов** |  | 58.23d | 2023-03-23 14:00 | 2023-06-19 15:51 |  |  |  | 2023-03-23 14:00 | 2023-07-19 16:00 | 80.25d | 11.98d |  | Сервер | 4833.86h |  | 14,189.1 | 15,248 |  |
| 9 | 3.1 | Анализ и построение структуры базы объектов |  | 2w | 2023-03-23 14:00 | 2023-04-06 17:00 |  |  |  | 2023-03-23 14:00 | 2023-04-06 16:00 | 2w | 11.98d | 0d | Системный аналитик | 80h |  | 1,900 | 1,900 |  |
| 10 | 3.2 | Программирование средств обработки базы объектов |  | 1w | 2023-04-06 17:00 | 2023-04-13 17:00 | 9 |  |  | 2023-04-06 16:00 | 2023-04-20 16:00 | 2w | 11.98d | 0d | Программист #3; Программист #4; Программист #2; Программист #1; Программист #5; Программист #6 | 240h |  | 1,980 | 1,830 |  |
| 11 | 3.3 | Наполнение базы объектов |  | 8.57w | 2023-04-13 17:00 | 2023-06-19 15:51 | 10 |  |  | 2023-04-20 16:00 | 2023-07-19 16:00 | 12w | 11.98d |  | Наборщик данных #1; Наборщик данных #2; Наборщик данных #3; Наборщик данных #4; Наборщик данных #5; Наборщик данных #6; Наборщик данных #7 | 2400h |  | 4,870 | 4,850 |  |
| 12 | 4 | **Создание ядра GIS** |  | 58.81d | 2023-03-01 10:00 | 2023-05-26 17:27 |  |  |  | 2023-03-01 10:00 | 2023-06-07 10:33 | 66.07d | 0d |  |  | 1880h |  | 18,267.7 | 18,079.33 |  |
| 13 | 4.1 | Анализ и проектирование ядра |  | 3w | 2023-03-01 10:00 | 2023-03-23 13:00 |  |  |  | 2023-03-01 10:00 | 2023-03-23 13:00 | 3w | 0d |  | Ведущий программист; Системный аналитик | 240h |  | 4,000 | 4,000 |  |
| 14 | 4.2 | Создание модели ядра |  | 1.46w | 2023-03-23 14:00 | 2023-04-03 16:26 | 13 |  |  | 2023-03-23 14:00 | 2023-04-06 14:49 | 2.02w | 0d |  | Ведущий программист; Программист #1; Программист #2; Программист #3; Программист #4; Программист #5; Программист #6 | 400h |  | 3,367.63 | 3,336.46 |  |
| 15 | 4.3 | Тестирование модели ядра |  | 0.17w | 2023-04-03 16:26 | 2023-04-04 15:06 | 14 |  |  | 2023-04-06 14:49 | 2023-04-13 14:49 | 1w | 0d |  | Программист #1; Программист #2; Программист #3; Программист #4; Программист #5; Программист #6 | 40h |  | 580 | 330 |  |
| 16 | 4.4 | Создание рабочей версии ядра |  | 7.06w | 2023-04-04 15:06 | 2023-05-26 17:27 | 15 |  |  | 2023-04-13 14:49 | 2023-06-07 10:33 | 7.12w | 0d |  | Ведущий программист; Программист #1; Программист #2; Программист #3; Программист #4; Программист #5 | 1200h |  | 9,320.08 | 9,412.87 |  |
| 17 | 5 | Создание мультимедиа - наполнения |  | 6w | 2023-04-12 09:00 | 2023-05-30 13:00 | 3 |  |  | 2023-04-06 16:00 | 2023-05-24 13:00 | 6w | 25.21d |  | Мультимедиа-корреспондент; Специализированное ПО | 240h |  | 1,512 | 740 |  |
| 18 | 6 | Создание справочной системы |  | 2w | 2023-06-19 12:27 | 2023-07-03 12:27 | 7 |  |  | 2023-06-29 10:33 | 2023-07-13 12:33 | 2w | 2.28d |  | Технический писатель | 80h |  | 420 | 420 |  |
| 19 | 7 | **Создание руководства пользователя** |  | 17d | 2023-05-24 12:27 | 2023-06-19 12:27 | 7FS-10d |  |  | 2023-06-02 15:33 | 2023-06-29 10:33 | 17.5d | 0d |  |  | 160h |  | 1,010 | 1,010 |  |
| 20 | 7.1 | Разработка дизайна руководства |  | 1w | 2023-05-24 12:27 | 2023-05-31 12:27 |  |  |  | 2023-06-02 15:33 | 2023-06-09 16:33 | 1w | 0d |  | Художник-дизайнер | 40h |  | 390 | 390 |  |
| 21 | 7.2 | Написание руководства пользователя |  | 3w | 2023-05-26 12:27 | 2023-06-19 12:27 | 20SS+2d |  |  | 2023-06-06 15:33 | 2023-06-29 10:33 | 3w | 0d |  | Технический писатель | 120h |  | 620 | 620 |  |
| 22 | 8 | **Создание web-сайта и поддержка** |  | 23.5d | 2023-05-26 12:27 | 2023-06-29 17:27 |  |  |  | 2023-06-06 15:33 | 2023-07-11 11:33 | 23.62d | 0d |  |  | 248h |  | 2,106 | 2,106 |  |
| 23 | 8.1 | Разработка структуры сайта |  | 1d | 2023-05-26 12:27 | 2023-05-30 12:27 | 21SS |  |  | 2023-06-06 15:33 | 2023-06-08 15:33 | 1d | 0d |  | Web-дизайнер | 8h |  | 106 | 106 |  |
| 24 | 8.2 | Разработка дизайна сайта |  | 1.2w | 2023-05-30 12:27 | 2023-06-07 12:27 | 23 |  |  | 2023-06-08 15:33 | 2023-06-19 17:33 | 1.23w | 0d |  | 3D аниматор; Web-дизайнер; Художник-дизайнер | 120h |  | 1,110 | 1,110 |  |
| 25 | 8.3 | Наполнение сайта |  | 3w | 2023-06-07 12:27 | 2023-06-29 17:27 | 24 |  |  | 2023-06-19 17:33 | 2023-07-11 11:33 | 3w | 0d |  | Web-дизайнер | 120h |  | 890 | 890 |  |
| 26 | 9 | Тестирование сайта |  | 1.76w | 2023-06-22 17:27 | 2023-07-05 15:41 | 22FS-1w |  |  | 2023-07-04 11:33 | 2023-07-20 14:51 | 2.46w | 0d |  | Ведущий программист; Программист #1; Программист #2; Программист #3; Программист #4; Программист #5; Программист #6 | 480h |  | 3,962.2 | 3,945.85 |  |
| 27 | 10 | Сдача сайта в эксплуатацию | milestone | 0d | 2023-07-05 15:41 | 2023-07-05 15:41 | 26 |  |  | 2023-07-20 14:51 | 2023-07-20 14:51 | 0d | 0d |  |  |  |  |  |  |  |

| ID | WBS | Task | Type | Duration | Start | Finish | Baseline start | Baseline finish | Baseline duration | Total slack | Constraint | Resources | Work | Cost | Baseline cost |
| --- | --- | --- | --- | --- | --- | --- | --- | --- | --- | --- | --- | --- | --- | --- | --- |
| 28 | 11 | **Совещание** |  | 19.12d | 2023-03-01 09:00 | 2023-03-29 10:00 | 2023-03-01 09:00 | 2023-07-19 10:00 | 95.12d | 0d |  |  | 35h | 305 | 1,281 |
| 29 | 11.1 | Совещание 1 | manual | 1h | 2023-03-01 09:00 | 2023-03-01 10:00 | 2023-03-01 09:00 | 2023-03-01 10:00 | 1h |  | start no earlier than 2023-03-01 09:00 | 3D аниматор; Web-дизайнер; Ведущий программист; Мультимедиа-корреспондент; Системный аналитик; Технический писатель; Художник-дизайнер | 7h | 61 | 61 |
| 30 | 11.2 | Совещание 2 | manual | 1h | 2023-03-09 09:00 | 2023-03-09 10:00 | 2023-03-09 09:00 | 2023-03-09 10:00 | 1h |  | start no earlier than 2023-03-08 09:00 | 3D аниматор; Web-дизайнер; Ведущий программист; Мультимедиа-корреспондент; Системный аналитик; Технический писатель; Художник-дизайнер | 7h | 61 | 61 |
| 31 | 11.3 | Совещание 3 | manual | 1h | 2023-03-15 09:00 | 2023-03-15 10:00 | 2023-03-15 09:00 | 2023-03-15 10:00 | 1h |  | start no earlier than 2023-03-15 09:00 | 3D аниматор; Web-дизайнер; Ведущий программист; Мультимедиа-корреспондент; Системный аналитик; Технический писатель; Художник-дизайнер | 7h | 61 | 61 |
| 32 | 11.4 | Совещание 4 | manual | 1h | 2023-03-22 09:00 | 2023-03-22 10:00 | 2023-03-22 09:00 | 2023-03-22 10:00 | 1h |  | start no earlier than 2023-03-22 09:00 | 3D аниматор; Web-дизайнер; Ведущий программист; Мультимедиа-корреспондент; Системный аналитик; Технический писатель; Художник-дизайнер | 7h | 61 | 61 |
| 33 | 11.5 | Совещание 5 | manual | 1h | 2023-03-29 09:00 | 2023-03-29 10:00 | 2023-03-29 09:00 | 2023-03-29 10:00 | 1h |  | start no earlier than 2023-03-29 09:00 | 3D аниматор; Web-дизайнер; Ведущий программист; Мультимедиа-корреспондент; Системный аналитик; Технический писатель; Художник-дизайнер | 7h | 61 | 61 |
| 34 | 12 | **Презентация** |  | 56.25d | 2023-04-03 09:00 | 2023-06-26 11:00 |  |  |  | 0d |  |  | 40h | 1,710.4 |  |
| 35 | 12.1 | Презентация 1 | manual | 2h | 2023-04-03 09:00 | 2023-04-03 11:00 |  |  |  |  | start no earlier than 2023-04-03 09:00 | Ведущий программист; Системный аналитик; Мультимедиа-корреспондент; Web-дизайнер; Пачка бумаги [2 шт] | 8h | 280 |  |
| 36 | 12.2 | Презентация 2 | manual | 2h | 2023-04-17 09:00 | 2023-04-17 11:00 |  |  |  |  | start no earlier than 2023-04-17 09:00 | Ведущий программист; Мультимедиа-корреспондент; Web-дизайнер; Пачка бумаги [2 шт] | 6h | 240.6 |  |
| 37 | 12.3 | Презентация 3 | manual | 2h | 2023-05-02 09:00 | 2023-05-02 11:00 |  |  |  |  | start no earlier than 2023-05-01 09:00 | Ведущий программист; Мультимедиа-корреспондент; Web-дизайнер; Пачка бумаги [2 шт] | 6h | 240.6 |  |
| 38 | 12.4 | Презентация 4 | manual | 2h | 2023-05-15 09:00 | 2023-05-15 11:00 |  |  |  |  | start no earlier than 2023-05-15 09:00 | Ведущий программист; Мультимедиа-корреспондент; Web-дизайнер; Пачка бумаги [2 шт] | 6h | 240.6 |  |
| 39 | 12.5 | Презентация 5 | manual | 2h | 2023-05-29 09:00 | 2023-05-29 11:00 |  |  |  |  | start no earlier than 2023-05-29 09:00 | Ведущий программист; Мультимедиа-корреспондент; Web-дизайнер; Пачка бумаги [2 шт] | 6h | 240.6 |  |
| 40 | 12.6 | Презентация 6 | manual | 2h | 2023-06-13 09:00 | 2023-06-13 11:00 |  |  |  |  | start no earlier than 2023-06-12 09:00 | Ведущий программист; Web-дизайнер; Пачка бумаги [2 шт] | 4h | 234 |  |
| 41 | 12.7 | Презентация 7 | manual | 2h | 2023-06-26 09:00 | 2023-06-26 11:00 |  |  |  |  | start no earlier than 2023-06-26 09:00 | Ведущий программист; Web-дизайнер; Пачка бумаги [2 шт] | 4h | 234 |  |
