# Карта города

Schedule from MS Project, 2023-03-01 to 2023-09-19, costs in ₽.
Команда разработчиков из 16 человек занимается созданием карты города на основе собственного модуля отображения. Проект должен быть завершен в течение 6 месяцев. Бюджет проекта: 50 000 рублей.

## Calendars

- Стандартный: Mon-Fri 09:00-13:00, 14:00-18:00; Sat-Sun off. Exceptions (off unless hours are given): 2023-03-08 (Международный женский день), 2023-04-29 to 2023-05-01 (Праздник Весны и Труда), 2023-05-06 to 2023-05-09 (День Победы), 2023-06-10 to 2023-06-12 (День России).

## Resources

| Resource | Group | Rate | Cost per use |
| --- | --- | --- | --- |
| Ведущий программист | Программирование | 10 | 100 |
| Программист #1 | Программирование | 7 | 50 |
| Программист #2 | Программирование | 7 | 50 |
| Программист #3 | Программирование | 7 | 50 |
| Программист #4 | Программирование | 7 | 50 |
| Системный аналитик | Анализ | 20 | 300 |
| Художник-дизайнер | Дизайн | 8 | 70 |
| Технический писатель | Документация | 5 | 20 |
| Web-дизайнер | Internet | 7 | 50 |
| 3D аниматор | Дизайн | 8 | 70 |
| Мультимедиа-корреспондент | М-медиа | 3 | 20 |
| Наборщик данных #1 | Ввод данных | 2 | 10 |
| Наборщик данных #2 | Ввод данных | 2 | 10 |
| Наборщик данных #3 | Ввод данных | 2 | 10 |
| Наборщик данных #4 | Ввод данных | 2 | 10 |
| Наборщик данных #5 | Ввод данных | 2 | 10 |
| Сервер |  | 2 |  |

## Schedule

| ID | WBS | Task | Type | Duration | Start | Finish | Predecessors | Total slack | Free slack | Resources | Work | Cost |
| --- | --- | --- | --- | --- | --- | --- | --- | --- | --- | --- | --- | --- |
| 1 | 1 | Начало проекта | milestone | 0d | 2023-03-01 | 2023-03-01 |  | 74d | 0d |  |  |  |
| 2 | 2 | **Анализ и проектирование** |  | 85d | 2023-03-01 | 2023-07-04 |  | 0d |  |  | 3473h | 17,096 |
| 3 | 2.1 | Анализ и проектирование ядра |  | 3w | 2023-03-01 | 2023-03-22 |  | 0d |  | Ведущий программист; Системный аналитик | 240h | 4,000 |
| 4 | 2.2 | **Построение базы объектов** |  | 10d | 2023-03-01 | 2023-03-15 |  | 55d |  | Сервер | 425h | 3,590 |
| 5 | 2.2.1 | Анализ и построение структуры базы объектов |  | 2w | 2023-03-01 | 2023-03-15 |  | 55d | 0d | Системный аналитик | 80h | 1,900 |
| 6 | 2.3 | Разработка структуры сайта |  | 1d | 2023-05-05 | 2023-05-05 | 28SS | 59d | 0d | Web-дизайнер | 8h | 106 |
| 7 | 2.4 | **Создание ядра GIS** |  | 25d | 2023-03-23 | 2023-04-26 |  | 0d |  |  | 400h | 4,550 |
| 8 | 2.4.1 | Создание модели ядра |  | 5w | 2023-03-23 | 2023-04-26 | 3 | 0d |  | Ведущий программист; Программист #1 | 400h | 3,550 |
| 9 | 2.5 | Наполнение базы объектов |  | 12w | 2023-04-06 | 2023-07-04 | 20 | 55d |  | Наборщик данных #1; Наборщик данных #2; Наборщик данных #3; Наборщик данных #4; Наборщик данных #5 | 2400h | 4,850 |
| 10 | 3 | **Создание интерфейса** |  | 55d | 2023-03-01 | 2023-05-22 | 1 | 74d |  |  | 720h | 6,010 |
| 11 | 3.1 | **Разработка дизайна интерфейса** |  | 25d | 2023-03-01 | 2023-04-05 |  | 74d | 0d |  | 320h | 2,770 |
| 12 | 3.1.1 | Разработка 2D графических элементов |  | 3w | 2023-03-01 | 2023-03-22 |  | 74d | 0d | Художник-дизайнер | 120h | 1,030 |
| 13 | 3.1.2 | Разработка 3D графических элементов |  | 2w | 2023-03-01 | 2023-03-15 | 12SS | 74d | 0d | 3D аниматор | 80h | 710 |
| 14 | 3.1.3 | Создание заставки |  | 3w | 2023-03-16 | 2023-04-05 | 13 | 74d |  | 3D аниматор | 120h | 1,030 |
| 15 | 3.2 | Создание мультимедиа - наполнения |  | 6w | 2023-04-06 | 2023-05-22 | 11 | 85d |  | Мультимедиа-корреспондент | 240h | 740 |
| 16 | 3.3 | Разработка дизайна сайта |  | 1w | 2023-05-10 | 2023-05-16 | 6 | 59d | 0d | 3D аниматор; Web-дизайнер; Художник-дизайнер | 120h | 1,110 |
| 17 | 3.4 | Разработка дизайна руководства |  | 1w | 2023-03-01 | 2023-03-07 |  | 102d | 43d | Художник-дизайнер | 40h | 390 |
| 18 | 4 | **Разработка ПО** |  | 130d | 2023-03-16 | 2023-09-19 |  | 0d |  |  | 1680h | 13,360 |
| 19 | 4.1 | Программирование интерфейса |  | 3w | 2023-04-27 | 2023-05-22 | 7, 11 | 59d | 0d | Программист #3; Программист #4 | 240h | 1,780 |
| 20 | 4.2 | Программирование средств обработки базы объектов |  | 3w | 2023-03-16 | 2023-04-05 | 5 | 55d | 0d | Программист #3; Программист #4 | 240h | 1,780 |
| 21 | 4.3 | Создание рабочей версии ядра |  | 10w | 2023-07-12 | 2023-09-19 | 23 | 0d |  | Ведущий программист; Программист #1; Программист #2 | 1200h | 9,800 |
| 22 | 5 | **Тестирование** |  | 50d | 2023-04-27 | 2023-07-11 |  | 0d |  |  | 880h | 6,890 |
| 23 | 5.1 | Тестирование модели ядра |  | 10w | 2023-04-27 | 2023-07-11 | 8 | 0d |  | Программист #1 | 400h | 2,850 |
| 24 | 5.2 | Тестирование сайта |  | 4w | 2023-05-31 | 2023-06-28 | 29FS-1w | 59d | 0d | Ведущий программист; Программист #1; Программист #2 | 480h | 4,040 |

| ID | WBS | Task | Type | Duration | Start | Finish | Predecessors | Total slack | Free slack | Resources | Work | Cost |
| --- | --- | --- | --- | --- | --- | --- | --- | --- | --- | --- | --- | --- |
| 25 | 6 | **Документация** |  | 20d | 2023-05-05 | 2023-06-05 |  | 59d |  |  | 200h | 1,040 |
| 26 | 6.1 | Создание справочной системы |  | 2w | 2023-05-23 | 2023-06-05 | 19 | 75d |  | Технический писатель | 80h | 420 |
| 27 | 6.2 | **Создание руководства пользователя** |  | 15d | 2023-05-05 | 2023-05-29 | 19FS-10d | 59d |  |  | 120h | 620 |
| 28 | 6.2.1 | Написание руководства пользователя |  | 3w | 2023-05-05 | 2023-05-29 | 17SS+2d | 59d | 0d | Технический писатель | 120h | 620 |
| 29 | 7 | **Создание web-сайта и поддержка** |  | 15d | 2023-05-17 | 2023-06-06 |  | 59d | 0d |  | 120h | 890 |
| 30 | 7.1 | Наполнение сайта |  | 3w | 2023-05-17 | 2023-06-06 | 16 | 59d |  | Web-дизайнер | 120h | 890 |
| 31 | 8 | Сдача сайта в эксплуатацию | milestone | 0d | 2023-06-28 | 2023-06-28 | 24 | 59d |  |  |  |  |
