Schedule from MS Project, 2023-04-03 to 2023-06-30, status date 2023-06-07, costs in ₽, A marks actual dates.

## Calendars

- Стандартный: Mon-Fri 09:00-13:00, 14:00-18:00; Sat-Sun off. Exceptions (off unless hours are given): 2023-05-01 (Праздник Весны и Труда), 2023-05-08 to 2023-05-09 (День Победы), 2023-06-12 (День России).

## Resources

| Resource | Group | Unit | Rate | Cost per use | Notes |
| --- | --- | --- | --- | --- | --- |
| Соколов | Программисты |  | 437.5 |  | Ведущий программист |
| Соломин | Программисты |  | 343.75 |  |  |
| Тимофеев | Программисты |  | 312.5 |  |  |
| Яковлева | Программисты |  | 312.5 |  |  |
| Петров | Дизайнеры |  | 468.75 |  | Руководитель дизайнерской группы |
| Кузнецов | Дизайнеры |  | 312.5 |  |  |
| Фомина | Редактор сайта |  | 250 |  |  |
| Преподаватели | Преподаватели |  | 700 |  |  |
| Программное обеспечение | ПО |  | 30000 | 5000 |  |
| Картриджи для принтера | Расходные материалы |  | 2500 |  |  |
| Бумага | Расходные материалы | шт | 200 |  |  |

## Schedule

| ID | WBS | Task | Type | Duration | Start | Finish | Predecessors | Complete | Remaining | Baseline start | Baseline finish | Baseline duration | Total slack | Free slack | Resources | Work | Actual work | Cost | Baseline cost | Actual cost |
| --- | --- | --- | --- | --- | --- | --- | --- | --- | --- | --- | --- | --- | --- | --- | --- | --- | --- | --- | --- | --- |
| 1 | 1 | Начало проекта | milestone | 0d | 2023-04-03 A | 2023-04-03 A |  | 100% |  | 2023-04-03 | 2023-04-03 | 0d |  |  |  |  |  |  |  |  |
| 2 | 2 | Установка ПО |  | 25d | 2023-04-04 A | 2023-05-11 A | 1FS+1d | 100% |  | 2023-04-04 | 2023-05-11 | 25d |  |  | Программное обеспечение; Соколов | 120h | 120h | 87,500 | 87,500 | 87,500 |
| 3 | 3 | Обучение персонала |  | 30d | 2023-04-18 A | 2023-06-01 A | 2SS+10d | 100% |  | 2023-04-18 | 2023-06-01 | 30d |  |  | Бумага [3 шт]; Картриджи для принтера; Кузнецов; Петров; Преподаватели; Соломин; Тимофеев; Яковлева; Соколов | 1080h | 1080h | 447,600 | 447,600 | 447,600 |
| 4 | 4 | **Разработка представительских сайтов** |  | 20d | 2023-06-02 A | 2023-06-30 | 3 | 25% | 15d | 2023-06-02 | 2023-06-28 | 18d | 0d |  |  | 80h | 20.8h | 26,000 | 26,000 | 6,715 |
| 5 | 4.1 | **Разработка сайта 1** |  | 17d | 2023-06-02 A | 2023-06-27 |  | 43% | 9.71d | 2023-06-02 | 2023-06-08 | 5d | 0d |  |  | 40h | 20.8h | 13,000 | 13,000 | 6,715 |
| 6 | 4.1.1 | Разработка дизайна сайта 1 |  | 2d | 2023-06-02 A | 2023-06-05 A |  | 100% |  | 2023-06-02 | 2023-06-05 | 2d |  |  | Кузнецов | 16h | 16h | 5,000 | 5,000 | 5,000 |
| 7 | 4.1.2 | Программирование сайта 1 |  | 5d | 2023-06-06 A | 2023-06-27 | 6 | 20% | 4d | 2023-06-06 | 2023-06-08 | 3d | 0d |  | Тимофеев | 24h | 4.8h | 7,500 | 7,500 | 1,500 |
| 8 | 4.2 | **Разработка сайта 2** |  | 5d | 2023-06-26 | 2023-06-30 | 5FS-2d |  |  | 2023-06-07 | 2023-06-28 | 15d | 0d |  |  | 40h |  | 13,000 | 13,000 |  |
| 9 | 4.2.1 | Разработка дизайна сайта 2 |  | 2d | 2023-06-26 | 2023-06-27 |  |  |  | 2023-06-07 | 2023-06-08 | 2d | 0d |  | Кузнецов | 16h |  | 5,000 | 5,000 |  |
| 10 | 4.2.2 | Программирование сайта 2 |  | 3d | 2023-06-28 | 2023-06-30 | 9 |  |  | 2023-06-26 | 2023-06-28 | 3d | 0d |  | Тимофеев | 24h |  | 7,500 | 7,500 |  |
| 11 | 5 | Представительские сайты сосзданы | milestone | 0d | 2023-06-30 | 2023-06-30 | 4 |  |  | 2023-06-28 | 2023-06-28 | 0d | 0d |  |  |  |  |  |  |  |
| 12 | 6 | **Разработка корпоративного сайта** |  | 18.33d | 2023-06-02 A | 2023-06-29 | 3 | 19% | 14.9d | 2023-06-02 | 2023-06-29 | 18.33d | 1.67d |  |  | 424h | 64h | 144,916.67 | 144,916.67 | 29,000 |
| 13 | 6.1 | Проектирование сайта |  | 5d | 2023-06-02 A | 2023-06-08 |  | 80% | 1d | 2023-06-02 | 2023-06-08 | 5d | 1.67d | 0d | Петров; Соколов | 80h | 64h | 36,250 | 36,250 | 29,000 |
| 14 | 6.2 | Программирование сайта |  | 10d | 2023-06-09 | 2023-06-23 | 13 |  |  | 2023-06-09 | 2023-06-23 | 10d | 1.67d | 0d | Соломин; Яковлева; Тимофеев | 240h |  | 78,500 | 78,500 |  |
| 15 | 6.3 | Наполнение сайта |  | 3d | 2023-06-21 | 2023-06-23 | 14FS-3d |  |  | 2023-06-21 | 2023-06-23 | 3d | 1.67d | 0d | Фомина | 24h |  | 6,000 | 6,000 |  |
| 16 | 6.4 | Тестирование сайта |  | 3.33d | 2023-06-26 | 2023-06-29 | 15 |  |  | 2023-06-26 | 2023-06-29 | 3.33d | 1.67d | 0d | Соломин; Яковлева; Фомина | 80h |  | 24,166.67 | 24,166.67 |  |
| 17 | 7 | Сдача сайта заказчику | milestone | 0d | 2023-06-29 | 2023-06-29 | 16 |  |  | 2023-06-29 | 2023-06-29 | 0d | 1.67d |  |  |  |  |  |  |  |
