# Создание карты города

Schedule from MS Project, 2024-03-01 to 2024-08-19, costs in ₽.
Команда разработчиков из 16 человек занимается созданием карты города на основе собственного модуля отображения. Проект должен быть завершен в течение 6 месяцев. Бюджет проекта: 50 000 рублей.

## Calendars

- Стандартный: Mon-Fri 09:00-13:00, 14:00-18:00; Sat-Sun off. Exceptions (off unless hours are given): 2024-03-08 (Международный женский день), 2024-04-28 to 2024-05-01 (Праздник Весны и Труда), 2024-05-09 to 2024-05-10 (День Победы), 2024-06-12 (День России).

## Resources

| Resource | Group | Rate | Cost per use |
| --- | --- | --- | --- |
| Ведущий программист | Программирование | 10 | 100 |
| Программист#1 | Программирование | 7 | 50 |
| Программист#2 | Программирование | 7 | 50 |
| Программист#3 | Программирование | 7 | 50 |
| Программист#4 | Программирование | 7 | 50 |
| Системный аналитик | Анализ | 20 | 300 |
| Художник-дизайнер | Дизайн | 8 | 70 |
| Технический писатель | Документация | 5 | 20 |
| Web-дизайнер | Internet | 7 | 50 |
| 3D аниматор | Дизайн | 8 | 70 |
| Мультимедиа- корреспондент | М-медиа | 3 | 20 |
| Наборщик данных#1 | Ввод данных | 2 | 10 |
| Наборщик данных#2 | Ввод данных | 2 | 10 |
| Наборщик данных#3 | Ввод данных | 2 | 10 |
| Наборщик данных#4 | Ввод данных | 2 | 10 |
| Наборщик данных#5 | Ввод данных | 2 | 10 |
| Аренда сервера |  | 2 |  |

## Schedule

| ID | WBS | Task | Type | Duration | Start | Finish | Predecessors | Total slack | Free slack | Resources | Work | Cost |
| --- | --- | --- | --- | --- | --- | --- | --- | --- | --- | --- | --- | --- |
| 1 | 1 | Начало проекта | milestone | 0w | 2024-03-01 | 2024-03-01 |  | 0d |  |  |  |  |
| 2 | 2 | **Анализ и проектирование** |  | 25d | 2024-03-01 | 2024-04-05 |  | 5d |  |  | 320h | 5,900 |
| 3 | 2.1 | Анализ и построение структуры базы объектов |  | 2w | 2024-03-25 | 2024-04-05 | 1 | 5d | 0d | Системный аналитик | 80h | 1,900 |
| 4 | 2.2 | Анализ и проектирование ядра |  | 3w | 2024-03-01 | 2024-03-22 | 1 | 7d | 0d | Системный аналитик; Ведущий программист | 240h | 4,000 |
| 5 | 3 | **Разработка** |  | 40d | 2024-03-01 | 2024-04-26 |  | 0d |  |  | 1008h | 8,546 |
| 6 | 3.1 | Разработка 2D графических элементов |  | 3w | 2024-03-01 | 2024-04-05 | 1 | 60d |  | Художник-дизайнер | 120h | 1,030 |
| 7 | 3.2 | Разработка 3D графических элементов |  | 2w | 2024-03-01 | 2024-03-22 | 1 | 55d | 0d | 3D аниматор | 80h | 710 |
| 8 | 3.3 | Создание заставки |  | 3w | 2024-03-25 | 2024-04-12 | 7 | 55d |  | 3D аниматор | 120h | 1,030 |
| 9 | 3.4 | Создание модели ядра |  | 5w | 2024-03-25 | 2024-04-26 | 4 | 7d | 0d | Ведущий программист; Программист#1 | 400h | 3,550 |
| 10 | 3.5 | Разработка дизайна руководства |  | 1w | 2024-03-19 | 2024-03-25 | 15FS-10d | 54d | 0d | Художник-дизайнер | 40h | 390 |
| 11 | 3.6 | Разработка структуры сайта |  | 1d | 2024-03-01 | 2024-03-01 | 1 | 0d |  | Web-дизайнер | 8h | 106 |
| 12 | 3.7 | Разработка дизайна сайта |  | 1w | 2024-03-04 | 2024-03-11 | 11 | 0d |  | Web-дизайнер; Художник-дизайнер; 3D аниматор | 120h | 1,110 |
| 13 | 3.8 | Написание руководства пользователя |  | 3w | 2024-03-26 | 2024-04-15 | 10 | 54d |  | Технический писатель | 120h | 620 |
| 14 | 4 | **Программирование** |  | 92d | 2024-03-12 | 2024-07-25 |  | 0d |  |  | 1680h | 12,960 |
| 15 | 4.1 | Программирование интерфейса |  | 3w | 2024-03-12 | 2024-04-01 | 12 | 0d |  | Программист#3; Программист#4 | 240h | 1,780 |
| 16 | 4.2 | Программирование средств обработки базы объектов |  | 3.8w | 2024-04-05 | 2024-04-19 | 3 | 5d | 0d | Программист#3; Программист#4; Аренда сервера | 240h | 1,380 |
| 17 | 4.3 | Создание рабочей версии ядра |  | 10w | 2024-05-16 | 2024-07-25 | 19 | 7d | 0d | Ведущий программист; Программист#1; Программист#2 | 1200h | 9,800 |
| 18 | 5 | **Тестирование** |  | 94d | 2024-04-02 | 2024-08-19 |  | 0d |  |  | 520h | 4,370 |
| 19 | 5.1 | Тестирование модели ядра |  | 1w | 2024-05-02 | 2024-05-15 | 9 | 7d | 0d | Программист#1 | 40h | 330 |
| 20 | 5.2 | Тестирование сайта |  | 8.8w | 2024-04-02 | 2024-08-19 | 15 | 0d |  | Ведущий программист; Программист#1; Программист#2 | 480h | 4,040 |
| 21 | 6 | **Поддержка** |  | 75d | 2024-04-22 | 2024-08-12 |  | 5d | 0d |  | 2840h | 6,900 |
| 22 | 6.1 | Наполнение базы объектов |  | 12w | 2024-04-22 | 2024-07-22 | 16 | 5d | 0d | Наборщик данных#1; Наборщик данных#2; Наборщик данных#3; Наборщик данных#4; Наборщик данных#5 | 2400h | 4,850 |
| 23 | 6.2 | Создание мультимедиа - наполнения |  | 6w | 2024-05-02 | 2024-06-17 | 5, 7 | 45d |  | Мультимедиа- корреспондент | 240h | 740 |
| 24 | 6.3 | Создание справочной системы |  | 2w | 2024-07-26 | 2024-08-08 | 13, 17 | 7d |  | Технический писатель | 80h | 420 |
| 25 | 6.4 | Наполнение сайта |  | 3w | 2024-07-23 | 2024-08-12 | 22 | 5d |  | Web-дизайнер | 120h | 890 |
| 26 | 7 | Сдача сайта в эксплуатацию | milestone | 0w | 2024-08-12 | 2024-08-12 | 21 | 5d |  |  |  |  |
