# rk

Schedule from MS Project, 2024-04-01 to 2024-06-21, status date 2024-06-03, costs in ₽, A marks actual dates.

## Calendars

- Стандартный: Mon-Fri 09:00-13:00, 14:00-18:00; Sat-Sun off. Exceptions (off unless hours are given): 2024-04-28 to 2024-05-01 (Праздник Весны и Труда), 2024-05-09 to 2024-05-10 (День Победы), 2024-06-12 (День России).

## Resources

| Resource | Group | Unit | Rate | Cost per use | Notes |
| --- | --- | --- | --- | --- | --- |
| Соколов | Программисты |  | 437.5 |  | Ведущий программист |
| Соломин | Программисты |  | 343.75 |  |  |
| Тимофеев | Программисты |  | 312.5 |  |  |
| Яковлева | Программисты |  | 312.5 |  |  |
| Петров | Дизайнеры |  | 468.75 |  | Руководитель дизайнерской группы |
| Кузнецов | Дизайнеры |  | 312.5 |  |  |
| Фомина | Редактор сайта |  | 250 |  |  |
| Преподаватели | Преподаватели |  | 700 |  |  |
| Программное обеспечение | ПО |  | 30000 | 5000 |  |
| Картриджы для принтера | Расходные материалы |  | 2500 |  |  |
| Бумага |  | пач./мес. | 200 |  |  |

## Schedule

| ID | WBS | Task | Type | Duration | Start | Finish | Predecessors | Complete | Remaining | Baseline start | Baseline finish | Baseline duration | Total slack | Free slack | Constraint | Resources | Work | Actual work | Cost | Baseline cost | Actual cost |
| --- | --- | --- | --- | --- | --- | --- | --- | --- | --- | --- | --- | --- | --- | --- | --- | --- | --- | --- | --- | --- | --- |
| 1 | 1 | Начало проекта | milestone | 0d | 2024-04-01 A | 2024-04-01 A |  | 100% |  | 2024-04-01 | 2024-04-01 | 0d |  |  |  |  |  |  |  |  |  |
| 2 | 2 | Установка ПО |  | 16d | 2024-04-02 A | 2024-05-20 A | 1FS+1d | 100% |  | 2024-04-02 | 2024-04-22 | 15d |  |  |  | Программное обеспечение; Соколов | 120h | 120h | 87,500 | 87,500 | 87,500 |
| 3 | 3 | Обучение персонала |  | 19d | 2024-04-16 A | 2024-05-19 A | 2SS+10d | 100% |  | 2024-04-16 | 2024-05-23 | 22.14d |  |  | start no earlier than 2023-04-18 | Бумага [3 пач./мес.]; Картриджы для принтера; Кузнецов; Петров; Преподаватели [300%]; Соломин; Тимофеев; Яковлева; Соколов | 960h | 960h | 399,100 | 399,100 | 399,100 |
| 4 | 4 | **Разработка представительских сайтов** |  | 9d | 2024-05-30 A | 2024-06-13 | 3 | 27% | 6.55d | 2024-05-30 | 2024-06-11 | 8d | 6.86d | 0d |  |  | 80h | 16h | 26,000 | 26,000 | 5,250 |
| 5 | 4.1 | **Разработка сайта 1** |  | 6d | 2024-05-30 A | 2024-06-07 |  | 50% | 3d | 2024-05-30 | 2024-06-06 | 5d | 6.86d | 0d |  |  | 40h | 16h | 13,000 | 13,000 | 5,250 |
| 6 | 4.1.1 | Разработка дизайна сайта 1 |  | 3d | 2024-05-30 A | 2024-06-04 A |  | 100% |  | 2024-05-30 | 2024-06-03 | 2d |  |  |  | Кузнецов | 16h | 16h | 5,000 | 5,000 | 5,000 |
| 7 | 4.1.2 | Программирование сайта 1 |  | 3d | 2024-06-04 | 2024-06-07 | 6 |  |  | 2024-06-03 | 2024-06-06 | 3d | 6.86d |  |  | Тимофеев | 24h |  | 7,500 | 7,500 |  |
| 8 | 4.2 | **Разработка сайта 2** |  | 5d | 2024-06-05 | 2024-06-13 | 5FS-2d |  |  | 2024-06-04 | 2024-06-11 | 5d | 6.86d |  |  |  | 40h |  | 13,000 | 13,000 |  |
| 9 | 4.2.1 | Разработка дизайна сайта 2 |  | 2d | 2024-06-05 | 2024-06-07 |  |  |  | 2024-06-04 | 2024-06-06 | 2d | 6.86d | 0d |  | Кузнецов | 16h |  | 5,000 | 5,000 |  |
| 10 | 4.2.2 | Программирование дизайна сайта 2 |  | 3d | 2024-06-07 | 2024-06-13 | 9 |  |  | 2024-06-06 | 2024-06-11 | 3d | 6.86d |  |  | Тимофеев | 24h |  | 7,500 | 7,500 |  |
| 11 | 5 | Представительские сайты созданы | milestone | 0d | 2024-06-13 | 2024-06-13 | 4 |  |  | 2024-06-11 | 2024-06-11 | 0d | 6.86d |  |  |  |  |  |  |  |  |
| 12 | 6 | **Разработка корпоративного сайта** |  | 24d | 2024-05-20 A | 2024-06-21 | 3 | 41% | 14.22d | 2024-05-23 | 2024-06-28 | 25d | 0d |  |  |  | 424h | 192h | 137,000 | 137,000 | 62,220 |
| 13 | 6.1 | Проектирование сайта |  | 4d | 2024-05-20 A | 2024-05-23 A |  | 100% |  | 2024-05-23 | 2024-05-30 | 5d |  |  |  | Кузнецов; Тимофеев | 80h | 80h | 25,000 | 25,000 | 25,000 |
| 14 | 6.2 | Программирование сайта |  | 15d | 2024-05-24 A | 2024-06-14 | 13 | 47% | 8d | 2024-05-30 | 2024-06-21 | 15d | 0d |  |  | Соломин; Яковлева | 240h | 112h | 79,750 | 79,750 | 37,220 |
| 15 | 6.3 | Наполнение сайта |  | 3d | 2024-06-11 | 2024-06-14 | 14FS-3d |  |  | 2024-06-18 | 2024-06-21 | 3d | 0d |  |  | Фомина | 24h |  | 6,000 | 6,000 |  |
| 16 | 6.4 | Тестирование сайта |  | 5d | 2024-06-17 | 2024-06-21 | 15 |  |  | 2024-06-21 | 2024-06-28 | 5d | 0d |  |  | Соломин; Яковлева | 80h |  | 26,250 | 26,250 |  |
| 17 | 7 | Сдача сайта заказчику | milestone | 0d | 2024-06-21 | 2024-06-21 | 16 |  |  | 2024-06-28 | 2024-06-28 | 0d | 0d |  |  |  |  |  |  |  |  |
